# 项目计划V0.0.1

Schedule from MS Project, 2021-07-19 to 2022-12-16, A marks actual dates.
P R C

## Calendars

- 2021~2022日历: Mon-Fri 08:00-12:00, 13:00-17:00; Sat-Sun off. Exceptions (off unless hours are given): 2021-10-01 to 2021-10-08 (国庆假期), 2022-01-03 (元旦假期), 2022-01-31 to 2022-02-06 (春节假期), 2022-04-05 (清明节假期), 2022-05-01 to 2022-05-04 (劳动节假期), 2022-06-03 to 2022-06-05 (端午节假期), 2022-09-10 to 2022-09-12 (中秋节假期), 2022-10-01 to 2022-10-07 (国庆节假期).

## Resources

| Resource |
| --- |
| 韦成 |
| 薛鹏宇 |
| 区伟权 |
| 和乃明 |
| 张海民 |
| 驱动工程师A |
| 孙茂杰 |
| 配置工程师-IT |
| PC工具开发工程师 |
| 开发环境 |
| 驱动工程师B |
| 系统工程师A |
| 系统工程师B |
| 刘晋 |
| 朱江华 |
| 应用软件开发A |
| 李晓辉 |
| 江澈 |
| 麦海军 |
| 测开工程师A |
| 测试工程师 |
| 蓝牙工程师 |

## Schedule

| ID | WBS | Task | Type | Duration | Start | Finish | Total slack |
| --- | --- | --- | --- | --- | --- | --- | --- |
| 1 | 1 | **里程碑合集** |  | 1d? | 2021-10-24 | 2021-10-24 |  |
| 2 | 1.1 | FPGA EVB板回板时间 | milestone, manual | 0d | 2022-03-18 | 2022-03-18 |  |
| 3 | 1.2 | FPGA自动化测试程序完成时间 | milestone, manual | 0d | 2021-10-24 | 2021-10-24 |  |
| 4 | 1.3 | 基于FPGA 功能测试完成时间 | milestone, manual | 0d | 2021-10-24 | 2021-10-24 |  |
| 5 | 1.4 | MS1008 芯片回片时间 | milestone, manual | 0d | 2022-07-26 | 2022-07-26 |  |
| 6 | 1.5 | 1008 EVB板回板时间 | milestone, manual | 0d | 2022-06-09 | 2022-06-09 |  |
| 7 | 1.6 | 基于1008 EVB板功能测试完成时间 | milestone, manual | 0d | 2021-10-24 | 2021-10-24 |  |
| 8 | 1.7 | ATE load board回板时间 | milestone, manual | 0d | 2022-03-18 | 2022-03-18 |  |
| 9 | 1.8 | ATE自动化测试程序完成时间 | milestone, manual | 0d | 2021-10-24 | 2021-10-24 |  |
| 10 | 1.9 | ATE自动化测试完成时间 | milestone, manual | 0d | 2021-10-24 | 2021-10-24 |  |
| 11 | 1.10 | 1008蓝牙遥控器回板时间 | milestone, manual | 0d | 2022-08-08 | 2022-08-08 |  |
| 12 | 1.11 | 1008蓝牙遥控器测试完成时间 | manual | 1d | 2021-10-24 | 2021-10-24 |  |
| 13 | 1.12 | SDK V1.0 正式发布 | milestone, manual | 0d | 2021-10-24 | 2021-10-24 |  |
| 14 | 1.13 | 客户导入时间 | milestone, manual | 0d | 2021-10-24 | 2021-10-24 |  |
| 15 | 1.14 | 客户导入验证完成时间 | milestone, manual | 0d | 2021-10-24 | 2021-10-24 |  |
| 18 | 2 | **芯片流片回片** |  | 111d | 2022-02-15 | 2022-07-26 | 0d |
| 19 | 2.1 | GDS_IN | manual | 2d | 2022-02-15 | 2022-02-16 |  |
| 20 | 2.2 | Dry run | manual | 13d | 2022-02-17 | 2022-03-07 |  |
| 21 | 2.3 | IP merge | manual | 10d | 2022-03-08 | 2022-03-20 |  |
| 22 | 2.4 | mask tooling | manual | 11d | 2022-03-21 | 2022-04-04 |  |
| 23 | 2.5 | W/S TO W/O | manual | 41d | 2022-04-05 | 2022-06-04 |  |
| 24 | 2.6 | Die saw+Grinding | manual | 12d | 2022-06-05 | 2022-06-19 |  |
| 25 | 2.7 | 报关物流 | manual | 9d | 2022-06-20 | 2022-06-30 |  |
| 26 | 2.8 | 委工单+订单制定 | manual | 6d | 2022-07-01 | 2022-07-08 |  |
| 27 | 2.9 | PKG加工→出货 | manual | 12d | 2022-07-09 | 2022-07-23 |  |
| 28 | 2.10 | 物流 | manual | 3d | 2022-07-24 | 2022-07-26 |  |

| ID | WBS | Task | Type | Duration | Start | Finish | Complete | Remaining | Actual start | Resources | Work | Actual work |
| --- | --- | --- | --- | --- | --- | --- | --- | --- | --- | --- | --- | --- |
| 29 | 3 | **FPGA Function 测试** |  | 11d? | 2022-01-27 | 2022-02-17 | 10% | 9.92d? | 2022-01-03 |  | 6808h | 480h |
| 30 | 3.1 | **FPGA EVB硬件板准备** |  | 32d? | 2022-01-27 | 2022-03-18 |  |  |  |  |  |  |
| 31 | 3.1.1 | 原理图绘制 | manual | 6d | 2022-01-27 | 2022-02-10 |  |  |  |  |  |  |
| 32 | 3.1.2 | 原理图评审 | manual | 2d | 2022-02-11 | 2022-02-14 |  |  |  |  |  |  |
| 33 | 3.1.3 | layout设计 | manual | 1d | 2022-02-15 | 2022-02-15 |  |  |  |  |  |  |
| 34 | 3.1.4 | layout评审 | manual | 1d | 2022-02-24 | 2022-02-24 |  |  |  |  |  |  |
| 35 | 3.1.5 | 生产文件处理 | manual | 2d | 2022-02-28 | 2022-03-01 |  |  |  |  |  |  |
| 36 | 3.1.6 | 物料及BOM采购 | manual | 6d | 2022-03-02 | 2022-03-09 |  |  |  |  |  |  |
| 37 | 3.1.7 | PCBA焊接 | manual | 3d | 2022-03-10 | 2022-03-14 |  |  |  |  |  |  |
| 38 | 3.1.8 | 硬件调试 | manual | 1d | 2022-03-11 | 2022-03-11 |  |  |  |  |  |  |
| 39 | 3.1.9 | 调试支持 | manual | 5d? | 2022-03-14 | 2022-03-18 |  |  |  |  |  |  |
| 40 | 3.2 | **FPGA自动化测试程序开发** |  | 57d? | 2022-03-24 A | 2022-06-17 | 18% | 46.7d? |  | 薛鹏宇 | 896h | 40h |
| 41 | 3.2.1 | **自动化测试方案** |  | 6d | 2022-03-24 A | 2022-03-31 | 99% | 0d |  | 薛鹏宇 | 48h | 8h |
| 42 | 3.2.1.1 | FPGA自动化测试方案输出 | manual | 5d | 2022-03-24 A | 2022-03-30 A | 100% |  |  |  |  |  |
| 43 | 3.2.1.2 | FPGA自动化测试方案评审 | manual | 1d | 2022-03-31 A | 2022-03-31 A | 100% |  |  |  |  |  |
| 44 | 3.2.2 | **自动化测试-蓝牙语音传输功能** |  | 1d? | 2022-03-24 | 2022-03-24 | 21% | 0.79d? | 2022-04-01 | 和乃明; 朱江华 | 368h | 32h |
| 45 | 3.2.2.1 | 自动化测试框架模块间接口设计和评审 | manual | 5d | 2022-04-01 A | 2022-04-08 A | 100% |  |  |  |  |  |
| 46 | 3.2.2.2 | 单元测试框架改进 | manual | 5d | 2022-04-11 A | 2022-04-15 | 80% | 1d |  | 和乃明 | 40h | 32h |
| 47 | 3.2.2.3 | PC控制Arduino/STM32输出验证 | manual | 5d | 2022-04-11 | 2022-04-15 |  |  |  | 朱江华 | 40h |  |
| 48 | 3.2.2.4 | 板子端后台服务设计和实现 | manual | 10d | 2022-04-18 | 2022-04-29 |  |  |  | 和乃明 | 80h |  |
| 49 | 3.2.2.5 | PC端通信任务设计和实现 | manual | 10d | 2022-04-18 | 2022-04-29 |  |  |  | 朱江华 | 80h |  |
| 50 | 3.2.2.6 | 基于FPGA硬件环境测试脚本调试 | manual | 7d | 2022-05-05 | 2022-05-13 |  |  |  | 和乃明; 朱江华 | 112h |  |
| 51 | 3.2.3 | **自动化测试-单元测试SPI完成** |  | 1d | 2022-03-24 | 2022-03-24 |  |  |  | 和乃明; 朱江华 | 16h |  |
| 52 | 3.2.3.1 | 基于FPGA环境联调 | manual | 5d | 2022-05-16 | 2022-05-20 |  |  |  |  |  |  |

| ID | WBS | Task | Type | Duration | Start | Finish | Complete | Remaining | Actual start | Resources | Work | Actual work |
| --- | --- | --- | --- | --- | --- | --- | --- | --- | --- | --- | --- | --- |
| 53 | 3.2.4 | **自动化测试-芯片驱动功能(3人并行)** |  | 1d? | 2022-03-24 | 2022-03-24 |  |  |  | 江澈 | 8h |  |
| 54 | 3.2.4.1 | 单元测试代码review | manual | 5d | 2022-04-18 | 2022-04-22 |  |  |  |  |  |  |
| 55 | 3.2.4.2 | 测试用例的设计和编写 | manual | 11d | 2022-05-16 | 2022-05-28 |  |  |  |  |  |  |
| 56 | 3.2.4.3 | 基于FPGA硬件环境测试脚本调试 | manual | 14d | 2022-05-30 | 2022-06-17 |  |  |  |  |  |  |
| 57 | 3.3 | **基于FPGA 功能开发** |  | 1d? | 2022-01-27 | 2022-01-27 | 14% | 0.86d? | 2022-01-03 |  | 4824h | 440h |
| 58 | 3.3.1 | **FPGA board bringup** |  | 10d | 2022-03-14 A | 2022-03-25 A | 100% |  |  | 江澈; 麦海军 | 160h | 160h |
| 59 | 3.3.1.1 | HW差异确认和软件准备 | manual | 5d | 2022-03-14 A | 2022-03-18 A | 100% |  |  |  |  |  |
| 60 | 3.3.1.2 | FPGA板子调试 | manual | 3d | 2022-03-18 A | 2022-03-22 A | 100% |  |  |  |  |  |
| 61 | 3.3.1.3 | bringup report（驱动验证结果） | manual | 4d | 2022-03-22 A | 2022-03-25 A | 100% |  |  |  |  |  |
| 62 | 3.3.2 | **SDK平台 platform驱动和测试** |  | 105d | 2022-01-03 | 2022-06-10 |  |  |  | 江澈; 麦海军 | 1760h |  |
| 63 | 3.3.2.1 | 按照之前platform驱动的计划, 3人投入 | manual | 105d | 2022-01-03 | 2022-06-10 |  |  |  |  |  |  |
| 64 | 3.3.3 | **SDK平台 集成Ceva协议栈** |  | 35d | 2022-02-14 A | 2022-04-01 A | 100% |  |  | 薛鹏宇 | 280h | 280h |
| 65 | 3.3.3.1 | Ceva集成设计方案 | manual | 10d | 2022-02-14 A | 2022-02-25 A | 100% |  |  |  |  |  |
| 66 | 3.3.3.2 | Ceva集成到SDK平台调试 | manual | 25d | 2022-02-28 A | 2022-04-01 A | 100% |  |  |  |  |  |
| 67 | 3.3.4 | **功耗管理模块** |  | 60d | 2022-03-14 | 2022-06-10 |  |  |  | 张海民; 李晓辉 | 960h |  |
| 68 | 3.3.4.1 | 功耗管理模块详细设计文档 | manual | 19d | 2022-03-14 | 2022-04-08 |  |  |  |  |  |  |
| 69 | 3.3.4.2 | 功耗管理模块设计文档评审 | manual | 3d | 2022-04-08 | 2022-04-12 |  |  |  |  |  |  |
| 70 | 3.3.4.3 | 功耗管理模块代码开发调试 | manual | 40d | 2022-04-12 | 2022-06-10 |  |  |  |  |  |  |
| 71 | 3.3.4.4 | 功耗管理模块代码review | manual | 1d | 2022-06-10 | 2022-06-10 |  |  |  |  |  |  |
| 72 | 3.3.5 | **log管理模块** |  | 56d | 2022-03-14 | 2022-06-06 |  |  |  | 薛鹏宇 | 448h |  |
| 73 | 3.3.5.1 | log管理模块设计文档编写 | manual | 10d | 2022-03-14 | 2022-03-25 |  |  |  |  |  |  |
| 74 | 3.3.5.2 | log管理模块设计文档评审 | manual | 3d | 2022-03-28 | 2022-03-30 |  |  |  |  |  |  |
| 75 | 3.3.5.3 | log管理模块代码开发调试 | manual | 41d | 2022-04-04 | 2022-06-03 |  |  |  |  |  |  |
| 76 | 3.3.5.4 | log管理模块代码review | manual | 1d | 2022-06-06 | 2022-06-06 |  |  |  |  |  |  |

Notes:
- 67: 4/8开始，到5/30结束
- 72: 改进内容包括RAM DUMP 6月中结束

| ID | WBS | Task | Type | Duration | Start | Finish | Complete | Remaining | Resources | Work |
| --- | --- | --- | --- | --- | --- | --- | --- | --- | --- | --- |
| 77 | 3.3.6 | **RTOS模块** |  | 30d | 2022-03-21 A | 2022-04-30 | 45% | 16.45d | 区伟权 | 240h |
| 78 | 3.3.6.1 | Freertos移植设计文档 | manual | 5d | 2022-03-21 A | 2022-03-25 A | 100% |  |  |  |
| 79 | 3.3.6.2 | Freertos移植设计文档评审 | milestone, manual | 0d | 2022-03-25 A | 2022-03-25 A | 100% |  |  |  |
| 80 | 3.3.6.3 | Freertos单元测试代码实现 | manual | 9d | 2022-03-28 A | 2022-04-08 A | 100% |  |  |  |
| 81 | 3.3.6.4 | main task和BT task改造设计 | manual | 5d | 2022-04-11 | 2022-04-15 |  |  |  |  |
| 82 | 3.3.6.5 | task改造设计评审 | manual | 2d | 2022-04-18 | 2022-04-19 |  |  |  |  |
| 83 | 3.3.6.6 | task改造开发和调试 | manual | 9d | 2022-04-20 | 2022-04-30 |  |  |  |  |
| 84 | 3.3.6.7 | RTOS模块代码review | manual | 1d | 2022-04-30 | 2022-04-30 |  |  |  |  |
| 85 | 3.3.7 | **分区管理设计和实现** |  | 17d | 2022-04-18 | 2022-05-13 |  |  | 驱动工程师A | 136h |
| 86 | 3.3.7.1 | flash分区管理设计 | manual | 5d | 2022-04-18 | 2022-04-22 |  |  |  |  |
| 87 | 3.3.7.2 | flash分区实现 | manual | 12d | 2022-04-25 | 2022-05-13 |  |  |  |  |
| 88 | 3.3.8 | **开机流程整理和bootloader设计** |  | 19d | 2022-05-16 | 2022-06-10 |  |  | 驱动工程师A | 152h |
| 89 | 3.3.8.1 | bootloader设计 | manual | 4d | 2022-05-16 | 2022-05-19 |  |  |  |  |
| 90 | 3.3.8.2 | bootloader实现和调试 | manual | 16d | 2022-05-19 | 2022-06-10 |  |  |  |  |
| 91 | 3.3.9 | **蓝牙测试配套工具 (Android)** |  | 31d? | 2022-05-05 | 2022-06-17 |  |  | 系统工程师A | 248h |
| 92 | 3.3.9.1 | 蓝牙测试配套工具调研 | manual | 7d | 2022-05-05 | 2022-05-13 |  |  |  |  |
| 93 | 3.3.9.2 | 蓝牙测试配套工具的开发(HID,Audio,OTA etc) | manual | 19d | 2022-05-16 | 2022-06-10 |  |  |  |  |
| 94 | 3.3.10 | **OTA模块** |  | 19d? | 2022-05-16 | 2022-06-10 |  |  | 应用软件开发A | 152h |
| 95 | 3.3.10.1 | OTA设计文档 | manual | 5d | 2022-05-16 | 2022-05-20 |  |  |  |  |
| 96 | 3.3.10.2 | OTA设计文档评审 | manual | 1d | 2022-05-20 | 2022-05-20 |  |  |  |  |
| 97 | 3.3.10.3 | OTA核心模块开发和调试 | manual | 8d | 2022-05-23 | 2022-06-01 |  |  |  |  |
| 98 | 3.3.10.4 | ble over OTA开发和调试 | manual | 7d | 2022-06-01 | 2022-06-10 |  |  |  |  |
| 99 | 3.3.10.5 | OTA代码review | manual | 1d | 2022-06-10 | 2022-06-10 |  |  |  |  |
| 100 | 3.3.11 | **SDK平台蓝牙完善** |  | 36d? | 2022-04-18 | 2022-06-10 |  |  | 蓝牙工程师 | 288h |
| 101 | 3.3.11.1 | 蓝牙audio实现 | manual | 10d | 2022-04-18 | 2022-04-29 |  |  |  |  |
| 102 | 3.3.11.2 | 蓝牙app代码整理 | manual | 8d | 2022-04-29 | 2022-05-13 |  |  |  |  |
| 103 | 3.3.11.3 | 蓝牙对外接口代码整理和单元测试 | manual | 20d? | 2022-05-13 | 2022-06-10 |  |  |  |  |

Notes:
- 77: 3/21开始，到4/30结束

| ID | WBS | Task | Type | Duration | Start | Finish | Resources | Work |
| --- | --- | --- | --- | --- | --- | --- | --- | --- |
| 104 | 3.4 | **配置管理环境搭建** |  | 70d? | 2022-04-04 | 2022-07-15 |  |  |
| 105 | 3.4.1 | **Gerrit代码review流程** |  | 19d | 2022-04-04 | 2022-04-29 |  |  |
| 106 | 3.4.1.1 | Gerrit服务器搭建 | manual | 5d | 2022-04-04 | 2022-04-09 |  |  |
| 107 | 3.4.1.2 | 静态代码检查和规则制定 | manual | 10d | 2022-04-11 | 2022-04-22 |  |  |
| 108 | 3.4.1.3 | 培训和流程实施 | manual | 4d | 2022-04-25 | 2022-04-28 |  |  |
| 109 | 3.4.2 | **Jenkins构建服务器搭建** |  | 14d? | 2022-05-03 | 2022-05-21 |  |  |
| 110 | 3.4.2.1 | Jenkins搭建和编译 | manual | 3d | 2022-05-03 | 2022-05-06 |  |  |
| 111 | 3.4.2.2 | Jenkins和Gerrit联动(编译通过后提交) | manual | 10d | 2022-05-09 | 2022-05-20 |  |  |
| 112 | 3.4.3 | **代码分支管理和权限分配** |  | 8d? | 2022-05-23 | 2022-06-01 |  |  |
| 113 | 3.4.3.1 | 代码分支管理模型确定 | manual | 5d | 2022-05-23 | 2022-05-27 |  |  |
| 114 | 3.4.3.2 | 权限配置 | manual | 3d | 2022-05-30 | 2022-06-01 |  |  |
| 115 | 3.4.4 | Jira bug管理配置 | manual | 3d | 2022-06-01 | 2022-06-03 |  |  |
| 116 | 3.5 | **测试服务器搭建** |  | 39d | 2022-05-23 | 2022-07-15 | 测开工程师A; 测试工程师 | 624h |
| 117 | 3.5.1 | 测试服务器整体设计 | manual | 5d | 2022-05-23 | 2022-05-27 |  |  |
| 118 | 3.5.2 | 测试服务器设计评审 | manual | 1d | 2022-05-30 | 2022-05-30 |  |  |
| 119 | 3.5.3 | 测试服务器基本功能-测试配置 | manual | 8d | 2022-05-31 | 2022-06-10 |  |  |
| 120 | 3.5.4 | 测试服务器基本功能-可执行文件烧入 | manual | 8d | 2022-06-13 | 2022-06-22 |  |  |
| 121 | 3.5.5 | 测试服务器基本功能-测试结果汇总 | manual | 7d | 2022-06-23 | 2022-07-01 |  |  |
| 122 | 3.5.6 | 和Jenkins联动，日构建测试流程打通 | manual | 10d | 2022-07-04 | 2022-07-15 |  |  |
| 123 | 3.6 | **开发环境和PC工具** |  | 66d | 2022-04-18 | 2022-07-22 |  | 424h |
| 124 | 3.6.1 | PC烧入工具设计 | manual | 10d | 2022-04-18 | 2022-04-29 | 驱动工程师B | 80h |
| 125 | 3.6.2 | PC烧入工具设计评审 | manual | 1d | 2022-05-03 | 2022-05-03 |  |  |
| 126 | 3.6.3 | PC烧入工具实现 | manual | 27d | 2022-05-04 | 2022-06-10 |  |  |
| 127 | 3.6.4 | PC烧入工具code review | manual | 1d | 2022-06-03 | 2022-06-03 |  |  |
| 128 | 3.6.5 | log解析工具设计 | manual | 5d | 2022-06-13 | 2022-06-17 |  |  |
| 129 | 3.6.6 | log解析工具设计评审 | manual | 1d | 2022-06-20 | 2022-06-20 |  |  |
| 130 | 3.6.7 | log解析工具实现 | manual | 14d | 2022-06-21 | 2022-07-08 |  |  |
| 131 | 3.6.8 | log解析工具code review | manual | 1d | 2022-07-01 | 2022-07-01 |  |  |
| 132 | 3.6.9 | 配置工具设计 | manual | 5d | 2022-07-11 | 2022-07-15 | 系统工程师A | 40h |
| 133 | 3.6.10 | 配置工具设计评审 | manual | 1d | 2022-07-18 | 2022-07-18 |  |  |
| 134 | 3.6.11 | 配置工具实现 | manual | 9d | 2022-07-19 | 2022-07-29 |  |  |
| 135 | 3.6.12 | 配置工具code review | manual | 1d | 2022-07-22 | 2022-07-22 |  |  |
| 136 | 3.6.13 | CMAKE脚本设计 | manual | 11d | 2022-04-18 | 2022-05-05 | 系统工程师A | 88h |
| 137 | 3.6.14 | CMAKE脚本实现 | manual | 6d | 2022-05-06 | 2022-05-13 |  |  |
| 138 | 3.6.15 | eclipse环境搭建 (PC开发工具集成eclipse) | manual | 22d | 2022-05-16 | 2022-06-15 | PC工具开发工程师 | 176h |
| 139 | 3.6.16 | 生产和校准工具设计 | manual | 5d | 2022-06-20 | 2022-06-24 | PC工具开发工程师 | 40h |
| 140 | 3.6.17 | 生产校准工具设计评审 | manual | 1d | 2022-06-24 | 2022-06-24 |  |  |
| 141 | 3.6.18 | 生产校准工具实现 | manual | 20d | 2022-06-27 | 2022-07-22 |  |  |
| 142 | 3.6.19 | 生产校准工具code review | manual | 1d | 2022-07-22 | 2022-07-22 |  |  |

| ID | WBS | Task | Type | Duration | Start | Finish | Total slack | Constraint | Resources | Work |
| --- | --- | --- | --- | --- | --- | --- | --- | --- | --- | --- |
| 143 | 3.7 | **基于FPGA 功能测试** |  | 1d? | 2022-01-27 | 2022-01-27 |  |  |  | 40h |
| 144 | 3.7.1 | **SDK平台软件V0.1测试版准备和发布** |  | 3d | 2022-06-13 | 2022-06-15 |  |  | 薛鹏宇 | 24h |
| 145 | 3.7.1.1 | V0.1版本功能测试 | manual | 5d | 2022-06-15 | 2022-06-21 |  |  |  |  |
| 146 | 3.7.1.2 | 发布文档自动化生成 | manual | 5d | 2022-06-20 | 2022-06-24 |  |  |  |  |
| 147 | 3.7.2 | **SDK平台软件0.2版本发布** |  | 1d? | 2022-06-22 | 2022-06-22 |  |  |  |  |
| 148 | 3.7.2.1 | 0.2版本全功能测试 | manual | 5d | 2022-06-23 | 2022-06-29 |  |  |  |  |
| 149 | 3.7.3 | **SDK平台软件0.3版本发布** |  | 1d | 2022-07-04 | 2022-07-04 |  |  |  | 16h |
| 150 | 3.7.3.1 | 0.3版本回归测试，SDK平台原型发布 | manual | 2d | 2022-07-05 | 2022-07-06 |  |  | 薛鹏宇 | 16h |
| 151 | 4 | 基于FPGA功能测试完成时间 | milestone | 0d | 2022-07-06 | 2022-07-06 | 112d | start no earlier than 2022-07-06 |  |  |
| 152 | 5 | **基于1008 EVB 芯片测试** |  | 11d? | 2021-10-24 | 2021-11-05 |  |  |  | 7456h |
| 153 | 5.1 | **1008 EVB硬件板准备** |  | 25d? | 2022-05-02 | 2022-06-08 |  |  |  |  |
| 154 | 5.1.1 | 原理图绘制 | manual | 4d | 2022-05-02 | 2022-05-09 |  |  |  |  |
| 155 | 5.1.2 | 原理图评审 | manual | 2d | 2022-05-10 | 2022-05-11 |  |  |  |  |
| 156 | 5.1.3 | layout设计 | manual | 5d | 2022-05-12 | 2022-05-18 |  |  |  |  |
| 157 | 5.1.4 | layout评审 | manual | 2d | 2022-05-19 | 2022-05-20 |  |  |  |  |
| 158 | 5.1.5 | 生产文件处理 | manual | 2d | 2022-05-23 | 2022-05-24 |  |  |  |  |
| 159 | 5.1.6 | 物料及BOM采购 | manual | 8d | 2022-05-25 | 2022-06-03 |  |  |  |  |
| 160 | 5.1.7 | PCBA焊接 | manual | 3d | 2022-06-06 | 2022-06-08 |  |  |  |  |
| 161 | 5.1.8 | 硬件调试 | manual | 1d | 2022-06-09 | 2022-06-09 |  |  |  |  |
| 162 | 5.1.9 | 调试支持 | manual | 1d? | 2022-07-26 | 2022-07-26 |  |  |  |  |
| 163 | 5.2 | **1008 EVB 软件功能开发** |  | 69d? | 2021-10-24 | 2022-01-27 |  |  |  | 4088h |
| 164 | 5.2.1 | bring up 1008 EVB | manual | 11d | 2022-06-25 | 2022-07-08 |  |  | 江澈; 麦海军 | 176h |
| 165 | 5.2.2 | 蓝牙RF调式 | manual | 7d | 2022-07-04 | 2022-07-12 |  |  |  |  |
| 166 | 5.2.3 | 模拟 (analog) audio,模拟AUX调式 | manual | 7d | 2022-07-04 | 2022-07-12 |  |  |  |  |
| 167 | 5.2.4 | bring up test report | manual | 5d | 2022-07-18 | 2022-07-22 |  |  |  |  |

| ID | WBS | Task | Type | Duration | Start | Finish | Resources | Work |
| --- | --- | --- | --- | --- | --- | --- | --- | --- |
| 168 | 5.2.5 | **功能设计** |  | 1d? | 2021-10-24 | 2021-10-24 |  | 3912h |
| 169 | 5.2.5.1 | **遥控器IR配对** |  | 10d | 2022-05-09 | 2022-05-20 | 应用软件开发A | 80h |
| 170 | 5.2.5.1.1 | IR配对模块设计文档编写 | manual | 3d | 2022-05-09 | 2022-05-11 |  |  |
| 171 | 5.2.5.1.2 | IR配对模块设计文档评审 | manual | 1d | 2022-05-11 | 2022-05-11 |  |  |
| 172 | 5.2.5.1.3 | IR配对模块代码开发调试 | manual | 7d | 2022-05-12 | 2022-05-20 |  |  |
| 173 | 5.2.5.1.4 | IR配对模块代码review | manual | 1d | 2022-05-20 | 2022-05-20 |  |  |
| 174 | 5.2.5.2 | **遥控器app完善（按照 智能硬件所-TCL蓝牙遥控器技术规范V1.5）** |  | 13d | 2022-05-23 | 2022-06-09 | 应用软件开发A | 104h |
| 175 | 5.2.5.2.1 | 规范文档阅读 | manual | 2d | 2022-05-23 | 2022-05-24 |  |  |
| 176 | 5.2.5.2.2 | 按键处理流程设计 | manual | 3d | 2022-05-25 | 2022-05-27 |  |  |
| 177 | 5.2.5.2.3 | 遥控器工厂自检设计 | manual | 3d | 2022-05-30 | 2022-06-01 |  |  |
| 178 | 5.2.5.2.4 | 编码和调式 | manual | 5d | 2022-06-02 | 2022-06-09 |  |  |
| 179 | 5.2.5.2.5 | 代码review | manual | 1d | 2022-06-09 | 2022-06-09 |  |  |
| 180 | 5.2.5.3 | **遥控器和电视OTA升级适配** |  | 5d? | 2022-06-13 | 2022-06-17 |  |  |
| 181 | 5.2.5.3.1 | OTA适配设计 | manual | 2d | 2022-06-13 | 2022-06-14 |  |  |
| 182 | 5.2.5.3.2 | OTA适配代码实现和调试 | manual | 3d | 2022-06-14 | 2022-06-16 |  |  |
| 183 | 5.2.5.4 | **蓝牙遥控器功能在 SOC芯片 EVB开发板验证完善** |  | 10d? | 2022-07-11 | 2022-07-22 |  |  |
| 184 | 5.2.5.4.1 | 组合键配对，无感配对验证 | milestone, manual | 2d | 2022-07-11 | 2022-07-12 |  |  |
| 185 | 5.2.5.4.2 | 遥控器和电视IR学习配对功能验证 | milestone, manual | 2d | 2022-07-13 | 2022-07-14 |  |  |
| 186 | 5.2.5.4.3 | 遥控器和电视OTA升级适配验证 | milestone, manual | 1d | 2022-07-15 | 2022-07-15 |  |  |
| 187 | 5.2.5.4.4 | 遥控器电量采集上报 | milestone, manual | 2d | 2022-07-18 | 2022-07-19 |  |  |
| 188 | 5.2.5.4.5 | 蓝牙配对，按键，语音传输验证 | milestone, manual | 3d | 2022-07-20 | 2022-07-22 |  |  |
| 189 | 5.2.5.5 | **存储模块-NV管理** |  | 20d | 2022-05-16 | 2022-06-13 | 系统工程师B | 160h |
| 190 | 5.2.5.5.1 | NV管理设计文档编写 | manual | 5d | 2022-05-16 | 2022-05-20 |  |  |
| 191 | 5.2.5.5.2 | NV管理设计文档评审 | manual | 1d | 2022-05-23 | 2022-05-23 |  |  |
| 192 | 5.2.5.5.3 | NV管理代码开发调试 | manual | 14d | 2022-05-24 | 2022-06-13 |  |  |
| 193 | 5.2.5.5.4 | NV管理代码review | manual | 1d | 2022-06-13 | 2022-06-13 |  |  |

| ID | WBS | Task | Type | Duration | Start | Finish | Resources | Work |
| --- | --- | --- | --- | --- | --- | --- | --- | --- |
| 194 | 5.2.5.6 | **存储模块-eFuse管理** |  | 15d | 2022-05-16 | 2022-06-03 | 区伟权 | 120h |
| 195 | 5.2.5.6.1 | eFuse管理设计文档编写 | manual | 3d | 2022-05-16 | 2022-05-18 |  |  |
| 196 | 5.2.5.6.2 | eFuse管理设计文档评审 | manual | 1d | 2022-05-19 | 2022-05-19 |  |  |
| 197 | 5.2.5.6.3 | eFuse管理代码开发调试 | manual | 10d | 2022-05-20 | 2022-06-02 |  |  |
| 198 | 5.2.5.6.4 | eFuse管理代码review | manual | 1d | 2022-06-03 | 2022-06-03 |  |  |
| 199 | 5.2.5.7 | **存储模块-文件系统** |  | 89d | 2022-08-08 | 2022-12-16 | 和乃明; 张海民 | 1424h |
| 200 | 5.2.5.7.1 | 嵌入式文件系统调研和选定 | manual | 5d | 2022-08-08 | 2022-08-12 |  |  |
| 201 | 5.2.5.7.2 | 文件系统移植设计 | manual | 15d | 2022-08-15 | 2022-09-02 |  |  |
| 202 | 5.2.5.7.3 | 文件系统移植设计评审 | manual | 1d | 2022-09-05 | 2022-09-05 |  |  |
| 203 | 5.2.5.7.4 | 文件系统代码开发和调试 | manual | 53d | 2022-09-06 | 2022-11-25 |  |  |
| 204 | 5.2.5.7.5 | 文件系统测试代码编写 | manual | 15d | 2022-11-07 | 2022-11-25 |  |  |
| 205 | 5.2.5.7.6 | 文件系统代码review | manual | 2d | 2022-11-24 | 2022-11-25 |  |  |
| 206 | 5.2.5.7.7 | 文件系统压力测试 | manual | 15d | 2022-11-28 | 2022-12-16 |  |  |
| 207 | 5.2.5.8 | **工程模式(TBD，需要调研）** |  | 20d? | 2022-08-01 | 2022-08-26 | 江澈 | 160h |
| 208 | 5.2.5.8.1 | 工程模式设计文档编写 | manual | 5d | 2022-08-01 | 2022-08-05 |  |  |
| 209 | 5.2.5.8.2 | 工程模式设计文档评审 | manual | 1d | 2022-08-05 | 2022-08-05 |  |  |
| 210 | 5.2.5.8.3 | 工程模式代码开发调试 | manual | 14d | 2022-08-08 | 2022-08-25 |  |  |
| 211 | 5.2.5.8.4 | 工程模式代码review | manual | 1d | 2022-08-25 | 2022-08-25 |  |  |
| 212 | 5.2.5.9 | **RTOS模块升级版** |  | 109d? | 2022-07-11 | 2022-12-16 | 薛鹏宇 | 872h |
| 213 | 5.2.5.9.1 | RTOS封装层 | manual | 10d | 2022-07-11 | 2022-07-22 |  |  |
| 214 | 5.2.5.9.2 | tickless睡眠模式 | manual | 5d | 2022-07-25 | 2022-07-29 |  |  |
| 215 | 5.2.5.9.3 | **统一的内存管理设计和实现** |  | 94d | 2022-08-01 | 2022-12-16 |  |  |
| 216 | 5.2.5.9.3.1 | 内存管理设计 | manual | 20d | 2022-08-01 | 2022-08-26 |  |  |
| 217 | 5.2.5.9.3.2 | 内存管理设计评审 | manual | 1d | 2022-08-29 | 2022-08-29 |  |  |
| 218 | 5.2.5.9.3.3 | 内存管理代码开发和调试 | manual | 45d | 2022-08-29 | 2022-11-07 |  |  |
| 219 | 5.2.5.9.3.4 | 内存管理测试代码编写 | manual | 1d | 2022-11-07 | 2022-11-07 |  |  |
| 220 | 5.2.5.9.3.5 | 内存管理代码review | manual | 1d | 2022-11-08 | 2022-11-08 |  |  |

| ID | WBS | Task | Type | Duration | Start | Finish | Resources | Work |
| --- | --- | --- | --- | --- | --- | --- | --- | --- |
| 221 | 5.2.5.9.3.6 | **内存管理压力测试** |  | 28d | 2022-11-09 | 2022-12-16 |  |  |
| 222 | 5.2.5.9.3.6.1 | Freertos、Ceva协议栈内存管理统一 | manual | 7d | 2022-11-10 | 2022-11-18 |  |  |
| 223 | 5.2.5.9.3.6.2 | 系统功能级压力测试 | manual | 20d | 2022-11-21 | 2022-12-16 |  |  |
| 224 | 5.2.5.10 | **安全模块(1)** |  | 15d | 2022-06-06 | 2022-06-24 | 区伟权 | 120h |
| 225 | 5.2.5.10.1 | 固件加密烧入 | manual | 15d | 2022-06-06 | 2022-06-24 |  |  |
| 226 | 5.2.5.11 | **安全模块(2)** |  | 109d | 2022-06-13 | 2022-11-18 | 区伟权 | 872h |
| 227 | 5.2.5.11.1 | IOT平台安全需求调研 | manual | 10d | 2022-07-11 | 2022-07-22 |  |  |
| 228 | 5.2.5.11.2 | 安全启动(TBD) | manual | 24d | 2022-08-29 | 2022-09-30 |  |  |
| 229 | 5.2.5.11.3 | flash加密(TBD) | manual | 38d | 2022-10-10 | 2022-11-30 |  |  |
| 230 | 5.3 | **配置管理环境搭建** |  | 69d | 2022-07-18 | 2022-10-28 |  | 584h |
| 231 | 5.3.1 | Jira和Jenkins联动(代码和需求bug对应） | manual | 19d | 2022-07-19 | 2022-08-12 | 测试工程师 | 152h |
| 232 | 5.3.2 | Jira版本发布管理 | manual | 5d | 2022-08-15 | 2022-08-19 |  |  |
| 233 | 5.3.3 | release自动化生成 | manual | 10d | 2022-08-15 | 2022-08-26 |  |  |
| 234 | 5.3.4 | Jira hilight问题和MP分支提交管控 | manual | 7d | 2022-08-29 | 2022-09-06 |  |  |
| 235 | 5.3.5 | 代码提交冒烟测试流程 | manual | 27d | 2022-09-07 | 2022-10-21 | 测开工程师A; 测试工程师 | 432h |
| 236 | 5.4 | **开发环境和PC工具** |  | 64d? | 2022-07-18 | 2022-10-21 | PC工具开发工程师; 开发环境 | 1024h |
| 237 | 5.4.1 | RAM dump工具设计 | manual | 10d | 2022-07-18 | 2022-07-29 |  |  |
| 238 | 5.4.2 | RAM dump工具设计评审 | manual | 1d | 2022-08-01 | 2022-08-01 |  |  |
| 239 | 5.4.3 | RAM dump工具实现 | manual | 40d | 2022-08-08 | 2022-10-07 |  |  |
| 240 | 5.4.4 | RAM dump工具code review | manual | 1d | 2022-09-30 | 2022-09-30 |  |  |
| 241 | 5.4.5 | 配置工具升级版本需求调研 | manual | 5d | 2022-07-18 | 2022-07-22 |  |  |
| 242 | 5.4.6 | 配置工具升级版本设计和开发 | manual | 26d | 2022-07-25 | 2022-08-29 |  |  |
| 243 | 5.5 | **测试服务器开发** |  | 104d | 2022-07-18 | 2022-12-16 | 测开工程师A; 测试工程师 | 1664h |
| 244 | 5.5.1 | 可视化测试配置管理 | manual | 19d | 2021-09-27 | 2021-10-29 |  |  |
| 245 | 5.5.2 | 可视化测试结果展现 | manual | 35d | 2021-11-01 | 2021-12-17 |  |  |
| 246 | 5.5.3 | 冒烟测试用例选择和实现 | manual | 50d | 2021-07-19 | 2021-09-24 |  |  |
| 247 | 5.5.4 | 自动化功能测试用例丰富 | manual | 54d | 2021-09-27 | 2021-12-17 |  |  |

| ID | WBS | Task | Type | Duration | Start | Finish | Total slack | Constraint | Resources | Work |
| --- | --- | --- | --- | --- | --- | --- | --- | --- | --- | --- |
| 248 | 5.6 | **基于1008EVB功能测试** |  | 1d? | 2021-10-24 | 2021-10-24 |  |  |  | 96h |
| 249 | 5.6.1 | 1008 EVB功能测试方案输出 | manual | 10d | 2022-07-04 | 2022-07-15 |  |  | 测试工程师 | 80h |
| 250 | 5.6.2 | 1008 EVB功能测试方案评审 | manual | 2d | 2022-07-18 | 2022-07-19 |  |  |  |  |
| 251 | 5.6.3 | **SDK平台软件V0.4测试版发布** |  | 1d | 2022-07-22 | 2022-07-22 |  |  | 薛鹏宇 | 8h |
| 252 | 5.6.3.1 | V0.4版本功能测试和问题点修改 | manual | 10d | 2022-07-25 | 2022-08-05 |  |  |  |  |
| 253 | 5.6.4 | **SDK平台软件V0.5测试版发布** |  | 1d | 2022-08-08 | 2022-08-08 |  |  |  |  |
| 254 | 5.6.4.1 | 0.5版本全功能测试 | manual | 5d | 2022-08-09 | 2022-08-15 |  |  |  |  |
| 255 | 5.6.5 | **SDK平台软件0.6版本发布** |  | 5d | 2022-08-16 | 2022-08-22 |  |  |  |  |
| 256 | 5.6.5.1 | 0.6版本全功能测试 | manual | 5d | 2022-08-23 | 2022-08-29 |  |  |  |  |
| 257 | 5.6.6 | SDK平台软件1.0版本发布(不含FS，安全，统一内存管理) | manual | 1d | 2022-09-01 | 2022-09-01 |  |  | 薛鹏宇 | 8h |
| 258 | 5.6.7 | **1008EVB功能测试报告** |  | 1d | 2021-10-24 | 2021-10-24 |  |  |  |  |
| 259 | 5.6.7.1 | 1008EVB功能测试报告输出 | manual | 1d | 2022-10-21 | 2022-10-21 |  |  |  |  |
| 260 | 5.6.7.2 | 基于1008EVB的测试报告评审 | manual | 2d | 2022-10-24 | 2022-10-25 |  |  |  |  |
| 261 | 5.7 | 基于EVB板芯片功能测试完成时间 | milestone | 0d | 2022-01-27 | 2022-01-27 | 216d | start no earlier than 2022-01-27 |  |  |
| 262 | 5.8 | **基于1008EVB指标测试** |  | 1d? | 2021-10-24 | 2021-10-24 |  |  |  |  |
| 263 | 5.8.1 | **指标测试方案** |  | 1d? | 2021-10-24 | 2021-10-24 |  |  |  |  |
| 264 | 5.8.1.1 | 指标测试方案输出 | manual | 1d? | 2021-10-24 | 2021-10-24 |  |  |  |  |
| 265 | 5.8.1.2 | 指标测试评审 | manual | 1d? | 2021-10-24 | 2021-10-24 |  |  |  |  |
| 266 | 5.8.2 | **功耗测试** |  | 1d? | 2021-10-24 | 2021-10-24 |  |  |  |  |
| 267 | 5.8.2.1 | 功耗指标1测试 | manual | 1d? | 2021-10-24 | 2021-10-24 |  |  |  |  |
| 268 | 5.8.2.2 | 功耗指标n测试 | manual | 1d? | 2021-10-24 | 2021-10-24 |  |  |  |  |
| 269 | 5.8.3 | **射频指标测试** |  | 1d | 2021-10-24 | 2021-10-24 |  |  |  |  |
| 270 | 5.8.3.1 | xxx | manual | 1d | 2021-10-24 | 2021-10-24 |  |  |  |  |
| 271 | 5.8.3.2 | xxx | manual | 1d | 2021-10-24 | 2021-10-24 |  |  |  |  |

| ID | WBS | Task | Type | Duration | Start | Finish |
| --- | --- | --- | --- | --- | --- | --- |
| 272 | 5.8.4 | **音频指标测试** |  | 1d | 2021-10-24 | 2021-10-24 |
| 273 | 5.8.4.1 | xxx | manual | 1d | 2021-10-24 | 2021-10-24 |
| 274 | 5.8.4.2 | xxx | manual | 1d | 2021-10-24 | 2021-10-24 |
| 275 | 5.8.5 | **xxx指标测试** |  | 1d | 2021-10-24 | 2021-10-24 |
| 276 | 5.8.5.1 | xxx | manual | 1d | 2021-10-24 | 2021-10-24 |
| 277 | 5.8.5.2 | xxx | manual | 1d | 2021-10-24 | 2021-10-24 |
| 278 | 5.8.6 | **芯片性能指标测试报告** |  | 1d? | 2022-01-27 | 2022-01-27 |
| 279 | 5.8.6.1 | 芯片性能指标测试报告输出 | manual | 1d? | 2022-01-27 | 2022-01-27 |
| 280 | 5.8.6.2 | 芯片性能指标测试报告评审 | manual | 1d? | 2022-01-27 | 2022-01-27 |
| 281 | 5.9 | 基于1008EVB指标测试完成时间 | manual | 1d? | 2021-10-24 | 2021-10-24 |
| 282 | 6 | 基于1008EVB芯片测试完成时间 | manual | 1d? | 2021-10-24 | 2021-10-24 |
| 283 | 7 | **ATE测试** |  | 1d? | 2021-10-24 | 2021-10-24 |
| 284 | 7.1 | **ATE测试load board准备** |  | 27d? | 2022-06-01 | 2022-07-08 |
| 285 | 7.1.1 | 原理图绘制 | manual | 6d | 2022-06-01 | 2022-06-09 |
| 286 | 7.1.2 | 原理图评审 | manual | 2d | 2022-06-09 | 2022-06-10 |
| 287 | 7.1.3 | layout设计 | manual | 68d | 2022-03-13 | 2022-06-21 |
| 288 | 7.1.4 | layout评审 | manual | 2d | 2022-06-21 | 2022-06-22 |
| 289 | 7.1.5 | 生产文件处理 | manual | 1d | 2022-06-23 | 2022-06-23 |
| 290 | 7.1.6 | 物料及BOM采购 | manual | 8d | 2022-06-24 | 2022-07-05 |
| 291 | 7.1.7 | PCBA焊接 | manual | 3d | 2022-07-06 | 2022-07-08 |
| 292 | 7.1.8 | 硬件调试 | manual | 1d | 2022-07-11 | 2022-07-11 |
| 293 | 7.1.9 | 调试支持 | manual | 1d? | 2022-06-01 | 2022-06-01 |
| 294 | 7.2 | **ATE自动化测试程序准备** |  | 6d? | 2021-10-24 | 2021-10-29 |
| 295 | 7.2.1 | **xxx** |  | 1d? | 2021-10-24 | 2021-10-24 |
| 296 | 7.2.1.1 | xxx | manual | 3d | 2021-10-24 | 2021-10-26 |
| 297 | 7.2.1.2 | xxx | manual | 1d? | 2021-10-24 | 2021-10-24 |

| ID | WBS | Task | Type | Duration | Start | Finish | Total slack | Work |
| --- | --- | --- | --- | --- | --- | --- | --- | --- |
| 298 | 7.2.2 | **xxx** |  | 1d | 2021-10-24 | 2021-10-24 |  |  |
| 299 | 7.2.2.1 | xxx | manual | 3d | 2021-10-24 | 2021-10-26 |  |  |
| 300 | 7.2.2.2 | xxx | manual | 3d | 2021-10-24 | 2021-10-26 |  |  |
| 301 | 7.2.3 | **xxx** |  | 1d | 2021-10-24 | 2021-10-24 |  |  |
| 302 | 7.2.3.1 | xxx | manual | 2d | 2021-10-24 | 2021-10-25 |  |  |
| 303 | 7.2.3.2 | xxx | manual | 3d | 2021-10-24 | 2021-10-26 |  |  |
| 304 | 7.3 | **ATE自动化测试** |  | 1d? | 2021-10-24 | 2021-10-24 |  |  |
| 305 | 7.3.1 | **xxx** |  | 0d? | 2021-10-24 | 2021-10-24 | 0d |  |
| 306 | 7.3.1.1 | xxx | manual | 1d? | 2021-10-24 | 2021-10-24 |  |  |
| 307 | 7.3.1.2 | xxx | manual | 1d? | 2021-10-24 | 2021-10-24 |  |  |
| 308 | 7.3.2 | **xxx** |  | 0d | 2021-10-24 | 2021-10-24 | 0d |  |
| 309 | 7.3.2.1 | xxx | manual | 1d | 2021-10-24 | 2021-10-24 |  |  |
| 310 | 7.3.2.2 | xxx | manual | 1d | 2021-10-24 | 2021-10-24 |  |  |
| 311 | 7.4 | **ATE测试报告** |  | 1d | 2021-10-24 | 2021-10-24 |  |  |
| 312 | 7.4.1 | ATE测试报告输出 | manual | 1d | 2021-10-24 | 2021-10-24 |  |  |
| 313 | 7.4.2 | ATE测试报告评审 | manual | 1d | 2021-10-24 | 2021-10-24 |  |  |
| 314 | 8 | ATE测试完成时间 | manual | 1d | 2021-10-24 | 2021-10-24 |  |  |
| 316 | 9 | **蓝牙遥控器测试** |  | 11d? | 2021-10-24 | 2021-11-05 |  | 888h |
| 317 | 9.1 | **1008蓝牙遥控器硬件板准备** |  | 27d? | 2022-07-01 | 2022-08-08 |  |  |
| 318 | 9.1.1 | 原理图绘制 | manual | 5d | 2022-07-01 | 2022-07-07 |  |  |
| 319 | 9.1.2 | 原理图评审 | manual | 2d | 2022-07-08 | 2022-07-11 |  |  |
| 320 | 9.1.3 | layout设计 | manual | 6d | 2022-07-12 | 2022-07-19 |  |  |
| 321 | 9.1.4 | layout评审 | manual | 2d | 2022-07-20 | 2022-07-21 |  |  |
| 322 | 9.1.5 | 生产文件处理 | manual | 1d | 2022-07-22 | 2022-07-22 |  |  |
| 323 | 9.1.6 | 物料及BOM采购 | manual | 8d | 2022-07-25 | 2022-08-03 |  |  |
| 324 | 9.1.7 | PCBA焊接 | manual | 2d | 2022-08-04 | 2022-08-05 |  |  |
| 325 | 9.1.8 | 硬件调试 | manual | 1d | 2022-08-08 | 2022-08-08 |  |  |
| 326 | 9.1.9 | 调试支持 | manual | 1d? | 2022-07-01 | 2022-07-01 |  |  |

| ID | WBS | Task | Type | Duration | Start | Finish | Total slack | Constraint | Resources | Work |
| --- | --- | --- | --- | --- | --- | --- | --- | --- | --- | --- |
| 327 | 9.2 | **1008蓝牙遥控器软件功能开发调试** |  | 45d? | 2022-07-15 | 2022-09-16 |  |  | 孙茂杰 | 888h |
| 328 | 9.2.1 | bringup 1008 product board | manual | 3d | 2022-07-15 | 2022-07-19 |  |  | 江澈 | 24h |
| 329 | 9.2.2 | bringup report 1008 product board | manual | 3d | 2022-07-15 | 2022-07-19 |  |  |  |  |
| 330 | 9.2.3 | **遥控器功能在小板验证** |  | 3d? | 2022-07-19 | 2022-07-21 |  |  | 孙茂杰 | 488h |
| 331 | 9.2.3.1 | sanity test pass version | manual | 1d? | 2022-07-22 | 2022-07-22 |  |  |  |  |
| 332 | 9.2.3.2 | 全功能测试通过达到发布标准 | manual | 1d? | 2022-07-22 | 2022-07-22 |  |  |  |  |
| 333 | 9.2.3.3 | 蓝牙性能调试优化 | manual | 29d | 2022-07-25 | 2022-09-01 |  |  | 薛鹏宇 | 232h |
| 334 | 9.2.3.4 | 产品板功耗优化 | manual | 29d | 2022-07-25 | 2022-09-01 |  |  | 薛鹏宇 | 232h |
| 335 | 9.2.4 | **蓝牙遥控器功能测试** |  | 1d | 2022-07-15 | 2022-07-15 |  |  | 孙茂杰 | 16h |
| 336 | 9.2.4.1 | 蓝牙遥控器测试方案输出 | manual | 10d | 2022-07-18 | 2022-07-29 |  |  |  |  |
| 337 | 9.2.4.2 | 蓝牙遥控器测试方案评审 | manual | 1d | 2022-07-28 | 2022-07-28 |  |  |  |  |
| 338 | 9.2.4.3 | **蓝牙遥控器V0.1测试版本** |  | 2d | 2022-08-04 | 2022-08-05 |  |  |  |  |
| 339 | 9.2.4.3.1 | V0.1版本功能测试和问题点修改 | manual | 5d | 2022-08-08 | 2022-08-12 |  |  |  |  |
| 340 | 9.2.4.4 | **蓝牙遥控器V0.2测试版本** |  | 1d | 2022-08-15 | 2022-08-15 |  |  |  |  |
| 341 | 9.2.4.4.1 | V0.2版本功能测试和问题点修改 | manual | 4d | 2022-08-16 | 2022-08-19 |  |  |  |  |
| 342 | 9.2.4.5 | **蓝牙遥控器V0.3测试版本** |  | 1d | 2022-08-22 | 2022-08-22 |  |  |  |  |
| 343 | 9.2.4.5.1 | V0.3版本功能测试和问题点修改 | manual | 5d | 2022-08-23 | 2022-08-29 |  |  |  |  |
| 344 | 9.2.4.6 | **蓝牙遥控器V0.4测试版发布** |  | 1d | 2022-08-30 | 2022-08-30 |  |  |  |  |
| 345 | 9.2.4.6.1 | 0.4版本全功能测试 | manual | 4d | 2022-08-31 | 2022-09-05 |  |  |  |  |
| 346 | 9.2.4.7 | 蓝牙遥控器1.0 版本发布 | manual | 1d | 2022-09-05 | 2022-09-05 |  |  | 孙茂杰 | 8h |
| 347 | 9.2.5 | **1008蓝牙遥控器功能测试报告** |  | 1d | 2022-07-15 | 2022-07-15 |  |  |  |  |
| 348 | 9.2.5.1 | 1008蓝牙遥控器功能测试报告输出 | manual | 1d | 2022-10-21 | 2022-10-21 |  |  |  |  |
| 349 | 9.2.5.2 | 1008蓝牙遥控器功能测试报告评审 | manual | 2d | 2022-10-24 | 2022-10-25 |  |  |  |  |
| 350 | 9.3 | 1008蓝牙遥控器功能测试完成时间 | milestone | 0d | 2022-01-27 | 2022-01-27 | 216d | start no earlier than 2022-01-27 |  |  |

| ID | WBS | Task | Type | Duration | Start | Finish |
| --- | --- | --- | --- | --- | --- | --- |
| 351 | 9.4 | **1008蓝牙遥控器指标测试** |  | 1d? | 2021-10-24 | 2021-10-24 |
| 352 | 9.4.1 | **指标测试方案** |  | 1d? | 2021-10-24 | 2021-10-24 |
| 353 | 9.4.1.1 | 指标测试方案输出 | manual | 1d? | 2021-10-24 | 2021-10-24 |
| 354 | 9.4.1.2 | 指标测试评审 | manual | 1d? | 2021-10-24 | 2021-10-24 |
| 355 | 9.4.2 | **功耗测试** |  | 1d? | 2021-10-24 | 2021-10-24 |
| 356 | 9.4.2.1 | xxx | manual | 1d? | 2021-10-24 | 2021-10-24 |
| 357 | 9.4.2.2 | xxx | manual | 1d? | 2021-10-24 | 2021-10-24 |
| 358 | 9.4.3 | **射频指标测试** |  | 1d | 2021-10-24 | 2021-10-24 |
| 359 | 9.4.3.1 | xxx | manual | 1d | 2021-10-24 | 2021-10-24 |
| 360 | 9.4.3.2 | xxx | manual | 1d | 2021-10-24 | 2021-10-24 |
| 361 | 9.4.4 | **音频指标测试** |  | 1d | 2021-10-24 | 2021-10-24 |
| 362 | 9.4.4.1 | xxx | manual | 1d | 2021-10-24 | 2021-10-24 |
| 363 | 9.4.4.2 | xxx | manual | 1d | 2021-10-24 | 2021-10-24 |
| 364 | 9.4.5 | **xxx指标测试** |  | 1d | 2021-10-24 | 2021-10-24 |
| 365 | 9.4.5.1 | xxx | manual | 1d | 2021-10-24 | 2021-10-24 |
| 366 | 9.4.5.2 | xxx | manual | 1d | 2021-10-24 | 2021-10-24 |
| 367 | 9.4.6 | **蓝牙遥控器性能指标测试报告** |  | 1d? | 2021-10-24 | 2021-10-24 |
| 368 | 9.4.6.1 | 芯片性能指标测试报告输出 | manual | 1d? | 2021-10-24 | 2021-10-24 |
| 369 | 9.4.6.2 | 芯片性能指标测试报告评审 | manual | 1d? | 2021-10-24 | 2021-10-24 |
| 370 | 9.5 | 蓝牙遥控器测试完成 | manual | 1d? | 2021-10-24 | 2021-10-24 |
