# sdk驱动任务开发计划20220105

Schedule from MS Project, 2021-12-10 to 2022-06-02, A marks actual dates.

## Calendars

- 标准: Mon-Fri 08:00-12:00, 13:00-17:00; Sat-Sun off. Exceptions (off unless hours are given): 2022-01-01 to 2022-01-03 (元旦), 2022-01-29 to 2022-02-06 (春节), 2022-04-03 to 2022-04-05 (清明节).

## Resources

| Resource |
| --- |
| 陈炳锐 |
| 麦海军 |
| 江澈 |
| 驱动gong'c |
| 驱动工程师1 |
| 腾群 |
| v |
| 韦成 |

## Schedule

| ID | WBS | Task | Type | Duration | Start | Finish | Predecessors | Complete | Remaining | Total slack | Constraint | Resources | Work | Actual work | 参考代码行 |
| --- | --- | --- | --- | --- | --- | --- | --- | --- | --- | --- | --- | --- | --- | --- | --- |
| 1 | 1 | **SDK驱动开发任务计划** |  | 117d | 2021-12-10 A | 2022-06-02 |  | 67% | 38.33d | 0d |  |  | 1856h | 1248h |  |
| 2 | 1.1 | **驱动开发** |  | 111d | 2021-12-10 A | 2022-05-25 |  | 75% | 27.35d | 6d |  |  | 1656h | 1248h |  |
| 3 | 1.1.1 | SysClock |  | 3d | 2021-12-10 A | 2021-12-14 A |  | 100% |  |  | start no earlier than 2021-12-14 | 陈炳锐 | 24h | 24h |  |
| 4 | 1.1.2 | PINMUX |  | 2d | 2021-12-17 A | 2021-12-20 A | 3 | 100% |  |  |  | 陈炳锐 | 16h | 16h |  |
| 5 | 1.1.3 | Interrupt |  | 1d | 2021-12-21 A | 2021-12-21 A | 4 | 100% |  |  |  | 陈炳锐 | 8h | 8h |  |
| 6 | 1.1.4 | **UART驱动** |  | 7d | 2021-12-22 A | 2021-12-30 A | 5 | 100% |  |  |  |  | 64h | 64h | 2326 |
| 7 | 1.1.4.1 | 消化技术资料 |  | 2d | 2021-12-22 A | 2021-12-23 A |  | 100% |  |  | start no earlier than 2021-12-21 | 陈炳锐 | 16h | 16h |  |
| 8 | 1.1.4.2 | 编写UART基本功能实现 |  | 2d | 2021-12-24 A | 2021-12-27 A | 7 | 100% |  |  |  | 陈炳锐 | 16h | 16h |  |
| 9 | 1.1.4.3 | 中断收发模式功能实现 |  | 2d | 2021-12-28 A | 2021-12-29 A | 8 | 100% |  |  |  | 陈炳锐 | 16h | 16h |  |
| 10 | 1.1.4.4 | UART0中断收发功能验证 | manual | 1d | 2021-12-30 A | 2021-12-30 A | 9 | 100% |  |  |  | 陈炳锐 | 8h | 8h |  |
| 11 | 1.1.4.5 | UART收发压力测试 |  | 1d | 2021-12-30 A | 2021-12-30 A | 9 | 100% |  |  |  | 陈炳锐 | 8h | 8h |  |
| 12 | 1.1.5 | **DMA驱动** |  | 16d | 2021-12-31 A | 2022-01-24 A |  | 100% |  |  |  |  | 128h | 128h | 911 |
| 13 | 1.1.5.1 | 消化技术资料 |  | 2d | 2021-12-31 A | 2022-01-04 A | 11 | 100% |  |  | start no earlier than 2021-12-29 | 陈炳锐 | 16h | 16h |  |
| 14 | 1.1.5.2 | 编写DMA LL代码 |  | 2d | 2022-01-05 A | 2022-01-06 A | 13 | 100% |  |  |  | 陈炳锐 | 16h | 16h |  |
| 15 | 1.1.5.3 | 编写DMA HAL代码 |  | 2d | 2022-01-07 A | 2022-01-10 A | 14 | 100% |  |  |  | 陈炳锐 | 16h | 16h |  |
| 16 | 1.1.5.4 | 编写DMA Driver代码 |  | 2d | 2022-01-11 A | 2022-01-12 A | 15 | 100% |  |  |  | 陈炳锐 | 16h | 16h |  |
| 17 | 1.1.5.5 | UART0 DMA模式收发功能实现与验证 |  | 4d | 2022-01-13 A | 2022-01-18 A | 16 | 100% |  |  |  | 陈炳锐 | 32h | 32h |  |
| 18 | 1.1.5.6 | UART1中断收发功能验证 |  | 2d | 2022-01-19 A | 2022-01-20 A | 17 | 100% |  |  |  | 陈炳锐 | 16h | 16h |  |
| 19 | 1.1.5.7 | UART2中断收发功能验证 |  | 2d | 2022-01-21 A | 2022-01-24 A | 18 | 100% |  |  |  | 陈炳锐 | 16h | 16h |  |
| 20 | 1.1.6 | **Timer驱动** |  | 10d | 2021-12-27 A | 2022-01-10 A |  | 100% |  |  |  |  | 72h | 72h | 1031 |
| 21 | 1.1.6.1 | 消化技术资料 |  | 2d | 2021-12-27 A | 2021-12-28 A |  | 100% |  |  | start no earlier than 2021-12-27 | 麦海军 | 16h | 16h |  |
| 22 | 1.1.6.2 | 编写timer ll 代码 |  | 2d | 2021-12-30 A | 2021-12-31 A | 21 | 100% |  |  |  | 麦海军 | 16h | 16h |  |
| 23 | 1.1.6.3 | 编写timer hal 及 timer driver 代码 |  | 3d | 2022-01-04 A | 2022-01-06 A | 22 | 100% |  |  |  | 麦海军 | 24h | 24h |  |
| 24 | 1.1.6.4 | timer0-timer7 驱动程序调试 |  | 2d | 2022-01-07 A | 2022-01-10 A | 23 | 100% |  |  |  | 麦海军 | 16h | 16h |  |

| ID | WBS | Task | Duration | Start | Finish | Predecessors | Complete | Remaining | Total slack | Constraint | Resources | Work | Actual work | 参考代码行 |
| --- | --- | --- | --- | --- | --- | --- | --- | --- | --- | --- | --- | --- | --- | --- |
| 25 | 1.1.7 | **WDT驱动** | 5d | 2022-01-11 A | 2022-01-17 A | 20 | 100% |  |  |  |  | 40h | 40h | 473 |
| 26 | 1.1.7.1 | 消化技术资料 | 1d | 2022-01-11 A | 2022-01-11 A | 24 | 100% |  |  |  | 麦海军 | 8h | 8h |  |
| 27 | 1.1.7.2 | 编写watchdog ll 代码 | 1d | 2022-01-12 A | 2022-01-12 A | 26 | 100% |  |  |  | 麦海军 | 8h | 8h |  |
| 28 | 1.1.7.3 | 编写watchdog hal及watchdog driver 代码 | 1d | 2022-01-13 A | 2022-01-13 A | 27 | 100% |  |  |  | 麦海军 | 8h | 8h |  |
| 29 | 1.1.7.4 | watchdog 驱动程序调试 | 2d | 2022-01-14 A | 2022-01-17 A | 28 | 100% |  |  |  | 麦海军 | 16h | 16h |  |
| 30 | 1.1.8 | **TRNG** | 3d | 2022-01-18 A | 2022-01-20 A | 25 | 100% |  |  |  |  | 24h | 24h | 33 |
| 31 | 1.1.8.1 | 消化技术资料 | 1d | 2022-01-18 A | 2022-01-18 A | 29 | 100% |  |  |  | 麦海军 | 8h | 8h |  |
| 32 | 1.1.8.2 | 编写trng ll 代码 | 0.5d | 2022-01-19 A | 2022-01-19 A | 31 | 100% |  |  |  | 麦海军 | 4h | 4h |  |
| 33 | 1.1.8.3 | 编写trng hal及driver 代码 | 0.5d | 2022-01-19 A | 2022-01-19 A | 32 | 100% |  |  |  | 麦海军 | 4h | 4h |  |
| 34 | 1.1.8.4 | trng 驱动程序调试 | 1d | 2022-01-20 A | 2022-01-20 A | 33 | 100% |  |  |  | 麦海军 | 8h | 8h |  |
| 35 | 1.1.9 | **QSPIFlash** | 13d | 2021-12-27 A | 2022-01-13 A |  | 100% |  |  |  |  | 88h | 88h |  |
| 36 | 1.1.9.1 | 消化技术资料 | 1d | 2021-12-27 A | 2021-12-27 A |  | 100% |  |  | start no earlier than 2021-12-27 | 江澈 | 8h | 8h |  |
| 37 | 1.1.9.2 | 编写GD Flash ll 代码 | 3d | 2021-12-30 A | 2022-01-04 A | 36 | 100% |  |  |  | 江澈 | 24h | 24h |  |
| 38 | 1.1.9.3 | 编写GD Flash hal及driver 代码 | 3d | 2022-01-05 A | 2022-01-07 A | 37 | 100% |  |  |  | 江澈 | 24h | 24h |  |
| 39 | 1.1.9.4 | GD Flash 驱动程序调试 | 4d | 2022-01-10 A | 2022-01-13 A | 38 | 100% |  |  |  | 江澈 | 32h | 32h |  |
| 40 | 1.1.10 | **POWER驱动** | 5d | 2022-01-14 A | 2022-01-20 |  | 80% | 1d | 88d |  |  | 40h | 32h |  |
| 41 | 1.1.10.1 | 编写Power ll 代码 | 1d | 2022-01-14 A | 2022-01-14 A | 35 | 100% |  |  |  | 江澈 | 8h | 8h |  |
| 42 | 1.1.10.2 | 编写Power hal及driver 代码 | 1d | 2022-01-17 A | 2022-01-17 A | 41 | 100% |  |  |  | 江澈 | 8h | 8h |  |
| 43 | 1.1.10.3 | power 驱动程序调试 | 3d | 2022-01-18 A | 2022-01-20 | 42 | 67% | 1d | 88d |  | 江澈 | 24h | 16h |  |
| 44 | 1.1.11 | **AUDIO ADC驱动** | 12d | 2022-01-25 A | 2022-02-16 A |  | 100% |  |  |  |  | 96h | 96h |  |
| 45 | 1.1.11.1 | 消化技术资料 | 3d | 2022-01-25 A | 2022-01-27 A | 19 | 100% |  |  |  | 陈炳锐 | 24h | 24h |  |
| 46 | 1.1.11.2 | 编写AUDIO ADC LL和HAL代码 | 2d | 2022-01-28 A | 2022-02-07 A | 45 | 100% |  |  |  | 陈炳锐 | 16h | 16h |  |
| 47 | 1.1.11.3 | 编写AUDIO ADC Driver代码 | 3d | 2022-02-08 A | 2022-02-10 A | 46 | 100% |  |  |  | 陈炳锐 | 24h | 24h |  |
| 48 | 1.1.11.4 | AUDIO ADC调试验证 | 4d | 2022-02-11 A | 2022-02-16 A | 47 | 100% |  |  |  | 陈炳锐 | 32h | 32h |  |

| ID | WBS | Task | Duration | Start | Finish | Predecessors | Complete | Remaining | Actual finish | Total slack | Free slack | Constraint | Resources | Work | Actual work | 参考代码行 |
| --- | --- | --- | --- | --- | --- | --- | --- | --- | --- | --- | --- | --- | --- | --- | --- | --- |
| 49 | 1.1.12 | **KeyScan驱动** | 42d | 2022-02-17 A | 2022-04-19 |  | 53% | 19.76d |  | 32d |  |  |  | 136h | 72h |  |
| 50 | 1.1.12.1 | 消化技术资料 | 3d | 2022-02-17 A | 2022-02-21 A | 48 | 100% |  |  |  |  |  | 陈炳锐 | 24h | 24h |  |
| 51 | 1.1.12.2 | 编写KeyScan LL和HAL代码 | 6d | 2022-04-12 A | 2022-04-19 A | 50 | 100% |  |  |  |  |  | 陈炳锐 | 48h | 48h |  |
| 52 | 1.1.12.3 | 编写KeyScan Driver代码 | 3d | 2022-04-06 | 2022-04-08 |  |  |  |  | 38d | 0d | start no earlier than 2022-04-06 | 韦成 | 24h |  |  |
| 53 | 1.1.12.4 | KeyScan调试验证 | 4d | 2022-04-11 | 2022-04-14 | 52 |  |  |  | 38d | 0d |  | 韦成 | 32h |  |  |
| 54 | 1.1.12.5 | KeyScan和AUDIO ADC代码Review | 1d | 2022-04-15 | 2022-04-15 | 53 |  |  |  | 38d |  |  | 韦成 | 8h |  |  |
| 55 | 1.1.13 | **GPIO驱动** | 10d | 2022-01-21 A | 2022-02-10 A |  | 100% |  |  |  |  |  |  | 80h | 80h | 1822 |
| 56 | 1.1.13.1 | 消化技术资料 | 2d | 2022-01-21 A | 2022-01-24 A | 30 | 100% |  |  |  |  |  | 麦海军 | 16h | 16h |  |
| 57 | 1.1.13.2 | 编写gpio ll 代码 | 2d | 2022-01-25 A | 2022-01-26 A | 56 | 100% |  |  |  |  |  | 麦海军 | 16h | 16h |  |
| 58 | 1.1.13.3 | 编写gpio hal 及 gpio driver 代码 | 2d | 2022-01-27 A | 2022-01-28 A | 57 | 100% |  |  |  |  |  | 麦海军 | 16h | 16h |  |
| 59 | 1.1.13.4 | gpio 驱动程序调试 | 4d | 2022-02-07 A | 2022-02-10 A | 58 | 100% |  |  |  |  |  | 麦海军 | 32h | 32h |  |
| 60 | 1.1.14 | **SPI Master驱动** | 25d | 2022-02-14 A | 2022-03-18 |  | 100% |  | 2022-04-11 |  |  |  |  | 88h | 88h | 2433 |
| 61 | 1.1.14.1 | 消化技术资料 | 3d | 2022-02-14 A | 2022-02-16 A | 59 | 100% |  |  |  |  |  | 麦海军 | 24h | 24h |  |
| 62 | 1.1.14.2 | 编写spi master ll 代码 | 3d | 2022-02-17 A | 2022-02-21 A | 61 | 100% |  |  |  |  |  | 麦海军 | 24h | 24h |  |
| 63 | 1.1.14.3 | 编写spi master hal及驱动代码 | 4d | 2022-02-22 A | 2022-02-25 A | 62 | 100% |  |  |  |  |  | 麦海军 | 32h | 32h |  |
| 64 | 1.1.14.4 | spi master 驱动程序调试 | 1d | 2022-04-11 A | 2022-04-11 A |  | 100% |  |  |  |  | finish no earlier than 2022-03-18 | 麦海军 | 8h | 8h |  |
| 65 | 1.1.15 | **AUX ADC驱动** | 10d | 2022-03-28 A | 2022-04-12 A |  | 100% |  |  |  |  |  |  | 80h | 80h | 2447 |
| 66 | 1.1.15.1 | 消化技术资料 | 2d | 2022-03-28 A | 2022-03-29 A |  | 100% |  |  |  |  |  | 麦海军 | 16h | 16h |  |
| 67 | 1.1.15.2 | 编写aux adc ll 代码 | 2d | 2022-03-30 A | 2022-03-31 A | 66 | 100% |  |  |  |  |  | 麦海军 | 16h | 16h |  |
| 68 | 1.1.15.3 | 编写aux adc hal及driver代码 | 3d | 2022-04-01 A | 2022-04-07 A | 67 | 100% |  |  |  |  |  | 麦海军 | 24h | 24h |  |
| 69 | 1.1.15.4 | 调试aux adc驱动 | 3d | 2022-04-08 A | 2022-04-12 A | 68 | 100% |  |  |  |  |  | 麦海军 | 24h | 24h |  |
| 70 | 1.1.16 | **Flash（ Boya ）驱动** | 5d | 2022-01-21 A | 2022-01-27 A | 40 | 100% |  |  |  |  |  |  | 40h | 40h |  |
| 71 | 1.1.16.1 | 编写GD Flash hal及driver 代码 | 2d | 2022-01-21 A | 2022-01-24 A |  | 100% |  |  |  |  |  | 江澈 | 16h | 16h |  |
| 72 | 1.1.16.2 | GD Flash 驱动程序调试 | 3d | 2022-01-25 A | 2022-01-27 A | 71 | 100% |  |  |  |  |  | 江澈 | 24h | 24h |  |

| ID | WBS | Task | Duration | Start | Finish | Predecessors | Complete | Total slack | Free slack | Constraint | Resources | Work | Actual work | 参考代码行 |
| --- | --- | --- | --- | --- | --- | --- | --- | --- | --- | --- | --- | --- | --- | --- |
| 73 | 1.1.17 | **Flash分区** | 7d | 2022-04-11 | 2022-04-19 |  |  |  |  |  |  | 56h |  |  |
| 74 | 1.1.17.1 | Flash 分区规划 | 3d | 2022-04-11 | 2022-04-13 |  |  | 32d | 0d | start no earlier than 2022-04-11 | 江澈 | 24h |  |  |
| 75 | 1.1.17.2 | Flash支持按分区擦读写 | 4d | 2022-04-14 | 2022-04-19 | 74 |  | 32d |  |  | 江澈 | 32h |  |  |
| 76 | 1.1.18 | **RF驱动（暂不需要开发）** | 9d | 2022-02-15 A | 2022-02-25 A | 73 | 100% |  |  |  |  | 72h | 72h |  |
| 77 | 1.1.18.1 | 编写RF SPI Driver层 代码 | 3d | 2022-02-15 A | 2022-02-17 A |  | 100% |  |  |  | 江澈 | 24h | 24h |  |
| 78 | 1.1.18.2 | 编写RF 逻辑层 代码 | 3d | 2022-02-18 A | 2022-02-22 A | 77 | 100% |  |  |  | 江澈 | 24h | 24h |  |
| 79 | 1.1.18.3 | RF驱动调试 | 3d | 2022-02-23 A | 2022-02-25 A | 78 | 100% |  |  |  | 江澈 | 24h | 24h |  |
| 80 | 1.1.19 | **PWM驱动** | 54d | 2022-01-05 | 2022-03-28 |  |  | 37d |  |  |  | 88h |  | 1271 |
| 81 | 1.1.19.1 | 消化技术资料 | 4d | 2022-01-05 | 2022-01-10 |  |  | 70d | 0d |  | 腾群 | 32h |  |  |
| 82 | 1.1.19.2 | 编写 LL和HAL代码 | 2d | 2022-01-11 | 2022-01-12 | 81 |  | 70d | 0d |  | 腾群 | 16h |  |  |
| 83 | 1.1.19.3 | 编写 Driver代码 | 2d | 2022-01-13 | 2022-01-14 | 82 |  | 70d | 0d |  | 腾群 | 16h |  |  |
| 84 | 1.1.19.4 | 调试验证 | 2d | 2022-01-17 | 2022-01-18 | 83 |  | 70d | 43d |  | 腾群 | 16h |  |  |
| 85 | 1.1.19.5 | 3路PWM同时测试，压力测试 | 1d | 2022-03-28 | 2022-03-28 | 84 |  | 27d | 0d | start no earlier than 2022-03-28 | 腾群 | 8h |  |  |
| 86 | 1.1.20 | **IR驱动** | 9d | 2022-03-29 | 2022-04-12 | 85 |  | 37d |  |  |  | 72h |  |  |
| 87 | 1.1.20.1 | 消化技术资料 | 2d | 2022-03-29 | 2022-03-30 | 85 |  | 37d | 0d |  | 麦海军 | 16h |  |  |
| 88 | 1.1.20.2 | 编写 LL和HAL代码 | 2d | 2022-03-31 | 2022-04-01 | 87 |  | 37d | 0d |  | 麦海军 | 16h |  |  |
| 89 | 1.1.20.3 | 编写 Driver代码 | 2d | 2022-04-06 | 2022-04-07 | 88 |  | 37d | 0d |  | 麦海军 | 16h |  |  |
| 90 | 1.1.20.4 | 调试验证 | 3d | 2022-04-08 | 2022-04-12 | 89 |  | 37d |  |  | 麦海军 | 24h |  |  |
| 91 | 1.1.21 | **SPI slave驱动** | 5d | 2022-04-13 A | 2022-04-19 A | 69 | 100% |  |  |  |  | 40h | 40h | 920 |
| 92 | 1.1.21.1 | 消化技术资料 | 1d | 2022-04-13 A | 2022-04-13 A | 69 | 100% |  |  |  | 麦海军 | 8h | 8h |  |
| 93 | 1.1.21.2 | 编写spi slave ll 代码 | 1d | 2022-04-14 A | 2022-04-14 A | 92 | 100% |  |  |  | 麦海军 | 8h | 8h |  |
| 94 | 1.1.21.3 | 编写spi slave hal 及spi slave driver代码 | 1d | 2022-04-15 A | 2022-04-15 A | 93 | 100% |  |  |  | 麦海军 | 8h | 8h |  |
| 95 | 1.1.21.4 | 调试spi slave 驱动程序 | 2d | 2022-04-18 A | 2022-04-19 A | 94 | 100% |  |  |  | 麦海军 | 16h | 16h |  |
| 96 | 1.1.22 | **I2C Slave驱动** | 5d | 2022-01-05 | 2022-01-11 |  |  | 95d |  |  |  | 40h |  |  |
| 97 | 1.1.22.1 | 消化技术资料 | 1d | 2022-01-05 | 2022-01-05 |  |  | 95d | 0d |  | 麦海军 | 8h |  |  |
| 98 | 1.1.22.2 | 编写i2c slave ll代码 | 1d | 2022-01-06 | 2022-01-06 | 97 |  | 95d | 0d |  | 麦海军 | 8h |  |  |
| 99 | 1.1.22.3 | 编写i2c slave hal 及 driver 代码 | 1d | 2022-01-07 | 2022-01-07 | 98 |  | 95d | 0d |  | 麦海军 | 8h |  |  |
| 100 | 1.1.22.4 | i2c slave bulk驱动程序调试 | 2d | 2022-01-10 | 2022-01-11 | 99 |  | 95d |  |  | 麦海军 | 16h |  |  |

| ID | WBS | Task | Type | Duration | Start | Finish | Predecessors | Complete | Total slack | Free slack | Constraint | Resources | Work | Actual work | 参考代码行 |
| --- | --- | --- | --- | --- | --- | --- | --- | --- | --- | --- | --- | --- | --- | --- | --- |
| 101 | 1.1.23 | **I2C Master驱动** |  | 10d | 2022-01-05 | 2022-01-18 |  |  | 90d |  |  |  | 80h |  | 1927 |
| 102 | 1.1.23.1 | 消息技术资料 |  | 2d | 2022-01-05 | 2022-01-06 |  |  | 90d | 0d |  | 麦海军 | 16h |  |  |
| 103 | 1.1.23.2 | 编写i2c master ll 代码 |  | 2d | 2022-01-07 | 2022-01-10 | 102 |  | 90d | 0d |  | 麦海军 | 16h |  |  |
| 104 | 1.1.23.3 | 编写i2c master hal及 i2c master drive 代码 |  | 3d | 2022-01-11 | 2022-01-13 | 103 |  | 90d | 0d |  | 麦海军 | 24h |  |  |
| 105 | 1.1.23.4 | i2c 驱动调试 |  | 3d | 2022-01-14 | 2022-01-18 | 104 |  | 90d |  |  | 麦海军 | 24h |  |  |
| 106 | 1.1.24 | **I2S Master驱动** |  | 15d | 2022-04-20 A | 2022-05-10 A | 75 | 100% |  |  |  |  | 120h | 120h | 1786 |
| 107 | 1.1.24.1 | 消化技术资料 |  | 3d | 2022-04-20 A | 2022-04-22 A | 75 | 100% |  |  |  | 麦海军 | 24h | 24h |  |
| 108 | 1.1.24.2 | 编写i2s master ll代码 |  | 3d | 2022-04-25 A | 2022-04-27 A | 107 | 100% |  |  |  | 麦海军 | 24h | 24h |  |
| 109 | 1.1.24.3 | 编写i2s master hal及i2s master driver 代码 |  | 4d | 2022-04-28 A | 2022-05-03 A | 108 | 100% |  |  |  | 麦海军 | 32h | 32h |  |
| 110 | 1.1.24.4 | i2s master 驱动调试 |  | 4d | 2022-05-04 A | 2022-05-09 A | 109 | 100% |  |  |  | 麦海军 | 32h | 32h |  |
| 111 | 1.1.24.5 | I2S DMA模式、FIFO不同深度、FIFO阈值、中断等 |  | 1d | 2022-05-10 A | 2022-05-10 A | 110 | 100% |  |  |  | 麦海军 | 8h | 8h |  |
| 112 | 1.1.25 | **Flash Remapping** |  | 4d | 2022-05-12 A | 2022-05-17 A |  | 100% |  |  |  |  | 32h | 32h |  |
| 113 | 1.1.25.1 | 编写Flash Remapping ll代码 |  | 1d | 2022-05-12 A | 2022-05-12 A |  | 100% |  |  |  | 江澈 | 8h | 8h |  |
| 114 | 1.1.25.2 | 编写Flash Remapping hal及driver 代码 |  | 1d | 2022-05-13 A | 2022-05-13 A | 113 | 100% |  |  |  | 江澈 | 8h | 8h |  |
| 115 | 1.1.25.3 | Flash Remapping 驱动调试 |  | 2d | 2022-05-16 A | 2022-05-17 A | 114 | 100% |  |  |  | 江澈 | 16h | 16h |  |
| 116 | 1.1.26 | **RTC驱动** |  | 4d | 2022-05-20 A | 2022-05-25 A |  | 100% |  |  |  |  | 32h | 32h | 459 |
| 117 | 1.1.26.1 | 编写RTC ll代码 |  | 1d | 2022-05-20 A | 2022-05-20 A |  | 100% |  |  |  | 江澈 | 8h | 8h |  |
| 118 | 1.1.26.2 | 编写RTC hal及driver 代码 |  | 1d | 2022-05-23 A | 2022-05-23 A | 117 | 100% |  |  |  | 江澈 | 8h | 8h |  |
| 119 | 1.1.26.3 | RTC 驱动调试 |  | 2d | 2022-05-24 A | 2022-05-25 A | 118 | 100% |  |  |  | 江澈 | 16h | 16h |  |
| 120 | 1.2 | **SDK驱动整合** |  | 3d | 2022-05-23 | 2022-05-25 |  |  |  |  |  |  | 72h |  |  |
| 121 | 1.2.1 | SDK驱动整合1 |  | 3d | 2022-05-23 | 2022-05-25 |  |  | 0d |  |  | 麦海军 | 24h |  |  |
| 122 | 1.2.2 | SDK驱动整合2 |  | 3d | 2022-05-23 | 2022-05-25 |  |  | 0d |  |  | 江澈 | 24h |  |  |
| 123 | 1.2.3 | SDK驱动整合3 |  | 3d | 2022-04-15 | 2022-04-19 |  |  | 26d |  | start no earlier than 2022-04-15 | 驱动工程师1 | 24h |  |  |
| 124 | 1.3 | **验证与优化** |  | 5d | 2022-05-26 | 2022-06-01 | 120 |  | 0d |  |  |  | 120h |  |  |
| 125 | 1.3.1 | 验证与优化1 |  | 5d | 2022-05-26 | 2022-06-01 | 123 |  | 0d |  |  | 驱动工程师1 | 40h |  |  |
| 126 | 1.3.2 | 验证与优化2 |  | 5d | 2022-05-26 | 2022-06-01 | 122 |  | 0d |  |  | 江澈 | 40h |  |  |
| 127 | 1.3.3 | 验证与优化3 |  | 5d | 2022-05-26 | 2022-06-01 | 121 |  | 0d |  |  | 麦海军 | 40h |  |  |
| 128 | 1.4 | 项目结项与总结 | milestone | 1d | 2022-06-02 | 2022-06-02 | 124 |  | 0d |  |  | 江澈 | 8h |  |  |
