# 项目计划V0.0.1

Schedule from MS Project, 2022-02-22 to 2022-04-25, A marks actual dates.
P R C

## Calendars

- 2021~2022日历: Mon-Fri 08:00-12:00, 13:00-17:00; Sat-Sun off. Exceptions (off unless hours are given): 2022-04-05 (清明节假期).

## Resources

| Resource |
| --- |
| 江澈 |
| 韦成 |
| 麦海军 |
| 刘晋 |
| 孙茂杰 |
| 李晓辉 |
| 应用1 |
| 驱动/应用1 |

## Schedule

| ID | WBS | Task | Type | Duration | Start | Finish | Predecessors | Complete | Remaining | Actual start | Actual finish | Baseline start | Baseline finish | Baseline duration | Total slack | Resources | Work | Actual work |
| --- | --- | --- | --- | --- | --- | --- | --- | --- | --- | --- | --- | --- | --- | --- | --- | --- | --- | --- |
| 1 | 1 | **TO2 FPGA验证计划** |  | 44d? | 2022-02-22 | 2022-04-25 |  | 94% | 2.66d? | 2022-02-23 |  | 2022-02-22 | 2022-04-12 | 35d? | 0d |  | 1288h | 1200h |
| 2 | 1.1 | **TO2 RTL修改点验证** |  | 38d? | 2022-02-22 | 2022-04-15 A |  | 100% |  | 2022-02-23 |  | 2022-02-22 | 2022-03-23 | 22d? |  |  | 392h | 392h |
| 3 | 1.1.1 | **SRAM\ROM、AES评估** |  | 3d? | 2022-02-22 | 2022-02-24 |  | 100% |  | 2022-02-23 | 2022-02-23 | 2022-02-22 | 2022-02-24 | 3d? |  |  | 8h | 8h |
| 4 | 1.1.1.1 | AES软件评估 | manual | 1d | 2022-02-23 A | 2022-02-23 A |  | 100% |  |  |  | 2022-02-23 | 2022-02-23 | 1d |  | 韦成 | 8h | 8h |
| 5 | 1.1.2 | **Case用例准备** |  | 8d? | 2022-02-28 A | 2022-03-09 |  | 100% |  |  | 2022-03-07 | 2022-02-28 | 2022-03-09 | 8d? |  |  | 80h | 80h |
| 6 | 1.1.2.1 | DMA |  | 1d | 2022-02-28 A | 2022-02-28 A |  | 100% |  |  |  | 2022-02-28 | 2022-02-28 | 1d |  | 韦成 | 8h | 8h |
| 7 | 1.1.2.2 | UART |  | 1d | 2022-02-28 A | 2022-02-28 A |  | 100% |  |  |  | 2022-02-28 | 2022-02-28 | 1d |  | 江澈 | 8h | 8h |
| 8 | 1.1.2.3 | I2C |  | 1d | 2022-03-01 A | 2022-03-01 A |  | 100% |  |  |  | 2022-03-01 | 2022-03-01 | 1d |  | 麦海军 | 8h | 8h |
| 9 | 1.1.2.4 | I2S |  | 1d | 2022-03-02 A | 2022-03-02 A | 8 | 100% |  |  |  | 2022-03-02 | 2022-03-02 | 1d |  | 麦海军 | 8h | 8h |
| 10 | 1.1.2.5 | SPI |  | 1d | 2022-03-03 A | 2022-03-03 A | 9 | 100% |  |  |  | 2022-03-03 | 2022-03-03 | 1d |  | 麦海军 | 8h | 8h |
| 11 | 1.1.2.6 | Timer |  | 1d | 2022-03-04 A | 2022-03-04 A | 10 | 100% |  |  |  | 2022-03-04 | 2022-03-04 | 1d |  | 麦海军 | 8h | 8h |
| 12 | 1.1.2.7 | FlashRemap |  | 1d | 2022-03-01 A | 2022-03-01 A | 7 | 100% |  |  |  | 2022-03-01 | 2022-03-01 | 1d |  | 江澈 | 8h | 8h |
| 13 | 1.1.2.8 | Aux |  | 1d | 2022-03-07 A | 2022-03-07 A | 11 | 100% |  |  |  | 2022-03-07 | 2022-03-07 | 1d |  | 麦海军 | 8h | 8h |
| 14 | 1.1.2.9 | PWM |  | 1d | 2022-03-02 A | 2022-03-02 A | 12 | 100% |  |  |  | 2022-03-02 | 2022-03-02 | 1d |  | 江澈 | 8h | 8h |
| 15 | 1.1.2.10 | PWR |  | 1d | 2022-03-03 A | 2022-03-03 A | 14 | 100% |  |  |  | 2022-03-03 | 2022-03-03 | 1d |  | 江澈 | 8h | 8h |
| 16 | 1.1.3 | **SRAM** |  | 2d | 2022-03-08 | 2022-03-09 |  | 100% |  | 2022-03-09 | 2022-03-17 | 2022-03-08 | 2022-03-09 | 2d |  |  | 24h | 24h |
| 17 | 1.1.3.1 | 代码修改 | manual | 1d | 2022-03-09 A | 2022-03-09 A |  | 100% |  |  |  | 2022-03-09 | 2022-03-09 | 1d |  | 韦成 | 8h | 8h |
| 18 | 1.1.3.2 | rom重新生成（输出SRAM大小） |  | 1d | 2022-03-09 A | 2022-03-09 A | 17 | 100% |  |  |  | 2022-03-09 | 2022-03-09 | 1d |  | 韦成 | 8h | 8h |
| 19 | 1.1.3.3 | 功能测试验证 |  | 1d | 2022-03-17 A | 2022-03-17 A | 18 | 100% |  |  |  | 2022-03-10 | 2022-03-11 | 2d |  | 韦成 | 8h | 8h |
| 20 | 1.1.4 | **Audio** |  | 2.5d | 2022-03-10 A | 2022-03-14 |  | 100% |  |  | 2022-03-16 | 2022-03-10 | 2022-03-14 | 2.5d |  |  | 16h | 16h |
| 21 | 1.1.4.1 | 代码修改 | manual | 1d | 2022-03-10 A | 2022-03-10 A |  | 100% |  |  |  | 2022-03-10 | 2022-03-10 | 1d |  | 江澈 | 8h | 8h |
| 22 | 1.1.4.2 | 测试验证 |  | 1d | 2022-03-16 A | 2022-03-16 A | 21 | 100% |  |  |  | 2022-03-11 | 2022-03-14 | 2d |  | 江澈 | 8h | 8h |
| 23 | 1.1.5 | **FPGA Clock** |  | 2d | 2022-03-11 | 2022-03-14 |  | 100% |  | 2022-03-25 | 2022-03-25 | 2022-03-11 | 2022-03-14 | 2d |  |  | 8h | 8h |
| 24 | 1.1.5.1 | 测试验证 | manual | 1d | 2022-03-25 A | 2022-03-25 A |  | 100% |  |  |  | 2022-03-11 | 2022-03-14 | 2d |  | 刘晋 | 8h | 8h |

Notes:
- 5: 参考checklist补全
- 20: 主要是Audio模块的修改和验证
- 23: 主要是修改了和BLE相关的时钟

| ID | WBS | Task | Type | Duration | Start | Finish | Predecessors | Complete | Remaining | Actual start | Actual finish | Baseline start | Baseline finish | Baseline duration | Total slack | Resources | Work | Actual work | Text2 | Text3 |
| --- | --- | --- | --- | --- | --- | --- | --- | --- | --- | --- | --- | --- | --- | --- | --- | --- | --- | --- | --- | --- |
| 25 | 1.1.6 | **IOMux(UART\SPI\I2S)** |  | 2d | 2022-03-16 | 2022-03-17 |  | 100% |  | 2022-03-11 | 2022-03-24 | 2022-03-16 | 2022-03-17 | 2d |  |  | 8h | 8h |  |  |
| 26 | 1.1.6.1 | 代码修改 |  | 1d | 2022-03-11 A | 2022-03-11 A | 22 | 100% |  |  |  | 2022-03-11 | 2022-03-11 | 1d |  | 江澈 |  |  |  |  |
| 27 | 1.1.6.2 | 测试验证 |  | 1d | 2022-03-24 A | 2022-03-24 A | 26 | 100% |  |  |  | 2022-03-16 | 2022-03-16 | 1d |  | 江澈 | 8h | 8h |  |  |
| 28 | 1.1.7 | **WDT** |  | 1d | 2022-03-11 | 2022-03-11 |  | 100% |  | 2022-03-09 | 2022-03-14 | 2022-03-11 | 2022-03-11 | 1d |  |  |  |  |  |  |
| 29 | 1.1.7.1 | 代码修改 |  | 1d | 2022-03-09 A | 2022-03-09 A |  | 100% |  |  |  | 2022-03-09 | 2022-03-09 | 1d |  | 麦海军 |  |  |  |  |
| 30 | 1.1.7.2 | 功能测试验证 |  | 1d | 2022-03-14 A | 2022-03-14 A | 29 | 100% |  |  |  | 2022-03-11 | 2022-03-11 | 0.5d |  | 麦海军 |  |  |  |  |
| 31 | 1.1.8 | **DMA+BLE** |  | 2d | 2022-03-14 A | 2022-03-15 A |  | 100% |  |  |  | 2022-03-14 | 2022-03-17 | 4d |  |  | 16h | 16h |  |  |
| 32 | 1.1.8.1 | 代码修改 |  | 1d | 2022-03-14 A | 2022-03-14 A | 19 | 100% |  |  |  | 2022-03-14 | 2022-03-15 | 2d |  | 韦成 | 8h | 8h |  |  |
| 33 | 1.1.8.2 | 功能测试验证 |  | 1d | 2022-03-15 A | 2022-03-15 A | 32 | 100% |  |  |  | 2022-03-16 | 2022-03-17 | 2d |  | 韦成 | 8h | 8h |  |  |
| 34 | 1.1.9 | **Aux** |  | 2d | 2022-03-14 | 2022-03-15 |  | 100% |  | 2022-03-11 | 2022-03-16 | 2022-03-14 | 2022-03-15 | 2d |  |  | 8h | 8h |  |  |
| 35 | 1.1.9.1 | 代码修改 |  | 1d | 2022-03-11 A | 2022-03-11 A | 30 | 100% |  |  |  | 2022-03-11 | 2022-03-11 | 1d |  | 麦海军 |  |  |  |  |
| 36 | 1.1.9.2 | 功能测试验证 | manual | 1d | 2022-03-16 A | 2022-03-16 A | 35 | 100% |  |  |  | 2022-03-15 | 2022-03-15 | 1d |  | 麦海军 | 8h | 8h |  |  |
| 37 | 1.1.10 | **EM** |  | 3d? | 2022-03-21 | 2022-03-23 A |  | 100% |  | 2022-03-23 |  | 2022-03-21 | 2022-03-23 | 3d |  |  | 8h | 8h | 前置：软件memory需求 |  |
| 38 | 1.1.10.1 | EM Arbiter测试验证 | manual | 1d | 2022-03-23 A | 2022-03-23 A |  | 100% |  |  |  | 2022-03-21 | 2022-03-23 | 3d |  | 韦成 | 8h | 8h |  |  |
| 39 | 1.1.11 | **ROM功能修改及验证** |  | 26d | 2022-03-10 A | 2022-04-15 A |  | 100% |  |  |  |  |  |  |  |  | 216h | 216h |  |  |
| 40 | 1.1.11.1 | BootROM WDT功能验证 | manual | 1d | 2022-03-16 A | 2022-03-16 A |  | 100% |  |  |  |  |  |  |  | 江澈 | 8h | 8h |  |  |
| 41 | 1.1.11.2 | BLE ROM打patch功能(固化版本) | manual | 26d | 2022-03-10 A | 2022-04-15 A |  | 100% |  |  |  | 2022-03-10 | 2022-04-15 | 0d |  | 李晓辉 | 208h | 208h |  |  |
| 42 | 1.2 | **TO1/TO2压力测试验证** |  | 43d? | 2022-02-23 | 2022-04-25 |  | 91% | 4.03d? | 2022-03-15 |  | 2022-02-23 | 2022-04-12 | 34d? | 0d |  | 896h | 808h |  |  |
| 43 | 1.2.1 | **第一阶段完成验证点** |  | 8d? | 2022-02-23 | 2022-03-04 |  | 100% |  | 2022-03-15 | 2022-03-29 | 2022-02-23 | 2022-03-04 | 8d? |  |  | 64h | 64h |  |  |
| 44 | 1.2.1.1 | **UART（功能测试）** |  | 1d | 2022-03-16 A | 2022-03-16 A |  | 100% |  |  |  | 2022-03-17 | 2022-03-17 | 1d |  |  | 8h | 8h |  |  |
| 45 | 1.2.1.1.1 | UART奇偶校验,停止位 |  | 1d | 2022-03-16 A | 2022-03-16 A | 27 | 100% |  |  |  | 2022-03-17 | 2022-03-17 | 1d |  | 江澈 | 8h | 8h |  | ms1008_uart_001_od |
| 46 | 1.2.1.2 | **FlashRemap** |  | 2d | 2022-03-16 A | 2022-03-17 A |  | 100% |  |  |  | 2022-03-18 | 2022-03-21 | 2d |  |  | 8h | 8h |  |  |
| 47 | 1.2.1.2.1 | Flash Remapping时擦写功能 | milestone | 0d | 2022-03-16 A | 2022-03-16 A | 45 | 100% |  |  |  | 2022-03-18 | 2022-03-18 | 1d |  | 江澈 |  |  |  | ms1008_flashremap_001_rw |
| 48 | 1.2.1.2.2 | Flash Remapping压力测试 |  | 1d | 2022-03-17 A | 2022-03-17 A | 47 | 100% |  |  |  | 2022-03-21 | 2022-03-21 | 1d |  | 江澈 | 8h | 8h |  | ms1008_flashremap_002_stress |

Notes:
- 26: IOMUX根据部分UART有调整
- 29: 增加支持WDT Disable的功能
- 31: 1.需要根据FPGA确认是否需要提速到192M
- 32: 开BLE时，DMA 搬运数据到EM代码编写
- 35: AUX FIFO有变化
- 37: 前置：软件memory需求
- 38: 1.配合：Arbiter UT验证
- 40: 1.包括UART烧录、低功耗进入和退出 / 2.验证看门狗关闭
- 48: Flash Remap开启后，remap a_src to b_dest，运行b_test程序，并向a_src写入数据，连续测试一小时以上

| ID | WBS | Task | Type | Duration | Start | Finish | Predecessors | Complete | Actual start | Actual finish | Baseline start | Baseline finish | Baseline duration | Resources | Work | Actual work | Text3 |
| --- | --- | --- | --- | --- | --- | --- | --- | --- | --- | --- | --- | --- | --- | --- | --- | --- | --- |
| 49 | 1.2.1.3 | **POWER（功能测试）** |  | 1d | 2022-03-15 A | 2022-03-15 A |  | 100% |  |  | 2022-03-22 | 2022-03-22 | 10d |  |  |  |  |
| 50 | 1.2.1.3.1 | 进入PD模式，GPIO唤醒 | milestone | 0d | 2022-03-15 A | 2022-03-15 A | 48 | 100% |  |  | 2022-03-22 | 2022-03-22 | 1d | 江澈 |  |  | ms1008_pwr_001_pdgpio |
| 51 | 1.2.1.4 | **SPI** |  | 1d | 2022-03-17 A | 2022-03-17 A |  | 100% |  |  | 2022-03-16 | 2022-03-17 | 2d |  | 8h | 8h |  |
| 52 | 1.2.1.4.1 | SPI Master 压力测试 |  | 1d | 2022-03-17 A | 2022-03-17 A | 36 | 100% |  |  | 2022-03-16 | 2022-03-16 | 1d | 麦海军 | 8h | 8h | ms1008_spi_001_master |
| 53 | 1.2.1.4.2 | SPI Slave 压力测试 | milestone | 0d | 2022-03-17 A | 2022-03-17 A | 52 | 100% |  |  | 2022-03-17 | 2022-03-17 | 1d | 麦海军 |  |  | ms1008_spi_002_slave |
| 54 | 1.2.1.5 | **I2C** |  | 1d | 2022-03-18 A | 2022-03-18 A |  | 100% |  |  | 2022-03-18 | 2022-03-22 | 3d |  | 8h | 8h |  |
| 55 | 1.2.1.5.1 | I2C mater压力测试 |  | 1d | 2022-03-18 A | 2022-03-18 A | 53 | 100% |  |  | 2022-03-18 | 2022-03-18 | 1d | 麦海军 | 8h | 8h | ms1008_i2c_001_master |
| 56 | 1.2.1.5.2 | I2C slave压力测试 | milestone | 0d | 2022-03-18 A | 2022-03-18 A | 55 | 100% |  |  | 2022-03-21 | 2022-03-21 | 1d | 麦海军 |  |  | ms1008_i2c_002_slave |
| 57 | 1.2.1.5.3 | I2C slave bulk测试 | milestone | 0d | 2022-03-18 A | 2022-03-18 A | 56 | 100% |  |  | 2022-03-22 | 2022-03-22 | 1d | 麦海军 |  |  | ms1008_i2c_003_bulk |
| 58 | 1.2.1.6 | **I2S** |  | 1d | 2022-03-22 A | 2022-03-22 A |  | 100% |  |  | 2022-03-23 | 2022-03-24 | 2d |  | 8h | 8h |  |
| 59 | 1.2.1.6.1 | I2S DMA模式、FIFO不同深度、FIFO阈值、中断等 |  | 1d | 2022-03-22 A | 2022-03-22 A | 57 | 100% |  |  | 2022-03-23 | 2022-03-23 | 1d | 麦海军 | 8h | 8h | ms1008_i2s_001_all |
| 60 | 1.2.1.6.2 | I2S 驱动压力测试 | milestone | 0d | 2022-03-22 A | 2022-03-22 A | 59 | 100% |  |  | 2022-03-24 | 2022-03-24 | 1d | 麦海军 |  |  | ms1008_i2s_002_stress |
| 61 | 1.2.1.7 | **PWM** |  | 1d | 2022-03-29 A | 2022-03-29 A |  | 100% |  |  | 2022-03-25 | 2022-03-25 | 1d |  | 8h | 8h |  |
| 62 | 1.2.1.7.1 | 3路同时开启压力测试(江澈)-存在缺波形的问题 |  | 1d | 2022-03-29 A | 2022-03-29 A | 58 | 100% |  |  | 2022-03-25 | 2022-03-25 | 1d | 麦海军 | 8h | 8h | ms1008_pwm_001_3chn |
| 63 | 1.2.1.8 | **WDT** |  | 1d | 2022-03-23 A | 2022-03-23 A |  | 100% |  |  | 2022-03-28 | 2022-03-28 | 1d |  | 8h | 8h |  |
| 64 | 1.2.1.8.1 | WDT压力测试 |  | 1d | 2022-03-23 A | 2022-03-23 A | 62 | 100% |  |  | 2022-03-28 | 2022-03-28 | 1d | 麦海军 | 8h | 8h | ms1008_wdt_001_stress |
| 65 | 1.2.1.9 | **DMA** |  | 1d | 2022-03-25 A | 2022-03-25 A |  | 100% |  |  | 2022-03-24 | 2022-03-30 | 5d |  | 8h | 8h |  |
| 66 | 1.2.1.9.1 | 6个通道同时压力测试 |  | 1d | 2022-03-25 A | 2022-03-25 A | 38 | 100% |  |  | 2022-03-24 | 2022-03-30 | 5d | 韦成 | 8h | 8h | ms1008_dma_001_6chn |
| 67 | 1.2.2 | **第二阶段完成验证点** |  | 10d? | 2022-03-07 | 2022-03-18 |  | 100% | 2022-03-17 | 2022-04-19 | 2022-03-07 | 2022-03-18 | 10d? |  | 160h | 160h |  |
| 68 | 1.2.2.1 | **POWER** |  | 1d | 2022-03-17 A | 2022-03-17 A |  | 100% |  |  | 2022-03-23 | 2022-03-23 | 1d |  | 8h | 8h |  |
| 69 | 1.2.2.1.1 | 进入低功耗，GPIO唤醒压力测试 |  | 1d | 2022-03-17 A | 2022-03-17 A | 50 | 100% |  |  | 2022-03-23 | 2022-03-23 | 0.5d | 江澈 | 8h | 8h | ms1008_pwr_002_gpio |
| 70 | 1.2.2.1.2 | 进入低功耗，RTC唤醒压力测试 | milestone | 0d | 2022-03-17 A | 2022-03-17 A | 69 | 100% |  |  | 2022-03-23 | 2022-03-23 | 0.5d | 江澈 |  |  | ms1008_pwr_003_rtc |
| 71 | 1.2.2.2 | **Audio ADC** |  | 2d | 2022-03-24 A | 2022-03-25 A |  | 100% |  |  | 2022-03-24 | 2022-03-24 | 1d |  | 16h | 16h |  |
| 72 | 1.2.2.2.1 | AUDIO 压力测试 |  | 2d | 2022-03-24 A | 2022-03-25 A | 70 | 100% |  |  | 2022-03-24 | 2022-03-24 | 1d | 江澈 | 16h | 16h | ms1008_audio_001_press |

Notes:
- 52: 外接spi flash，dma 的方式发送命令，读取spi flash的唯一id,判断所读到到的id是否正确，连续测试1个小时以上
- 53: 外接usb 转spi master 模块,接收smaster 发送的数据，判断接收数据是否正确；发送数据到外接的usb 转spi master 模块，在上位机判断数据是否正确，连续测试1小时以上。
- 55: 外接AT24C16,写入和读取数据，并判断写入和读出数据是否一致，连续测试1小时以上
- 56: 外接usb转i2c master 模块，从i2c master模块接收（cpu 方式）数据，并发送（cpu 方式）回i2c msater模块，由上位机判断接收到的数据和所发送的数据是否一致，连续测试1小时以上。
- 57: 外接usb转i2c master 模块，从i2c master模块接收数据（dma方式），并发送（dma方式）回i2c msater模块，由上位机判断接收到的数据和所发送的数据是否一致，连续测试1小时以上。
- 59: i2s 0和i2s1 对接，i2s0以中断方式发送数据，i2s1以dma 方式接收数据，连续测试1小时以上
- 60: i2s0和i2s1 对接，连续测试1小时以上
- 62: 1.三路pwm同时开启，外接逻辑分析仪，每隔一段时间，查看信号，连续测试1小时以上。
- 64: 启动wdt，设定复位时间，每隔一段时间复位一次，并将log打印到pc，连续测试1小时以上，分析log，芯片是否正常复位。
- 66: 1.DMA 6个通道同时压力测试 测试1小时以上 / 2.6个通道同时开启时，Audio DMA问题
- 69: 连续人工手动按键唤醒，测试一小时以上
- 70: 自动测试RTC唤醒，测试一小时以上
- 72: 启动DMA，连续测试一小时以上

| ID | WBS | Task | Type | Duration | Start | Finish | Predecessors | Complete | Actual start | Actual finish | Baseline start | Baseline finish | Baseline duration | Constraint | Resources | Work | Actual work | Text3 |
| --- | --- | --- | --- | --- | --- | --- | --- | --- | --- | --- | --- | --- | --- | --- | --- | --- | --- | --- |
| 73 | 1.2.2.3 | **Keyscan** |  | 1d | 2022-03-23 A | 2022-03-23 A |  | 100% |  |  | 2022-03-25 | 2022-03-29 | 3d |  |  |  |  |  |
| 74 | 1.2.2.3.1 | Keyscan单按键压力测试 | milestone | 0d | 2022-03-23 A | 2022-03-23 A | 72 | 100% |  |  | 2022-03-25 | 2022-03-25 | 1d |  | 江澈 |  |  | ms1008_keyscan_001_single |
| 75 | 1.2.2.3.2 | Keyscan组合按键压力测试 | milestone | 0d | 2022-03-23 A | 2022-03-23 A | 74 | 100% |  |  | 2022-03-28 | 2022-03-28 | 1d |  | 江澈 |  |  | ms1008_keyscan_002_mult |
| 76 | 1.2.2.3.3 | Keyscan长按键压力测试 | milestone | 0d | 2022-03-23 A | 2022-03-23 A | 75 | 100% |  |  | 2022-03-29 | 2022-03-29 | 1d |  | 江澈 |  |  | ms1008_keyscan_003_long |
| 77 | 1.2.2.4 | **GPIO(麦海军)** |  | 1d | 2022-03-25 A | 2022-03-25 A |  | 100% |  |  | 2022-03-30 | 2022-03-31 | 2d |  |  | 8h | 8h |  |
| 78 | 1.2.2.4.1 | GPIO输入 压力测试 |  | 1d | 2022-03-25 A | 2022-03-25 A | 76 | 100% |  |  | 2022-03-30 | 2022-03-30 | 1d |  | 江澈 | 8h | 8h | ms1008_gpio_001_in |
| 79 | 1.2.2.4.2 | GPIO输出 压力测试 | milestone | 0d | 2022-03-25 A | 2022-03-25 A | 78 | 100% |  |  | 2022-03-31 | 2022-03-31 | 1d |  | 江澈 |  |  | ms1008_gpio_001_out |
| 80 | 1.2.2.5 | **RTC** |  | 6d | 2022-03-21 A | 2022-03-28 A |  | 100% |  |  | 2022-04-01 | 2022-04-04 | 2d |  |  | 8h | 8h |  |
| 81 | 1.2.2.5.1 | RTC压力测试 | milestone | 0d | 2022-03-21 A | 2022-03-21 A | 79 | 100% |  |  | 2022-04-01 | 2022-04-01 | 1d |  | 江澈 |  |  | ms1008_rtc_001_all |
| 82 | 1.2.2.5.2 | 最大计数翻转测试 |  | 1d | 2022-03-28 A | 2022-03-28 A | 81 | 100% |  |  | 2022-04-04 | 2022-04-04 | 1d |  | 江澈 | 8h | 8h | ms1008_rtc_002_max |
| 83 | 1.2.2.6 | **Qspi** |  | 1d | 2022-03-25 A | 2022-03-25 A |  | 100% |  |  | 2022-04-05 | 2022-04-05 | 0d |  |  | 8h | 8h |  |
| 84 | 1.2.2.6.1 | 最快和最慢长期读写测试 |  | 1d | 2022-03-25 A | 2022-03-25 A | 82 | 100% |  |  | 2022-04-05 | 2022-04-05 | 1d |  | 江澈 | 8h | 8h | ms1008_qspi_001_long |
| 85 | 1.2.2.7 | **IR** |  | 1d | 2022-03-24 A | 2022-03-24 A |  | 100% |  |  | 2022-03-29 | 2022-03-29 | 1d |  |  | 8h | 8h |  |
| 86 | 1.2.2.7.1 | IR驱动压力测试 |  | 1d | 2022-03-24 A | 2022-03-24 A | 64 | 100% |  |  | 2022-03-29 | 2022-03-29 | 1d |  | 麦海军 | 8h | 8h | ms1008_ir_001_stress |
| 87 | 1.2.2.8 | **Timer** |  | 4d | 2022-03-22 A | 2022-03-25 A |  | 100% |  |  | 2022-03-30 | 2022-04-01 | 3d |  |  | 16h | 16h |  |
| 88 | 1.2.2.8.1 | 全部Timer同时开启 | milestone | 0d | 2022-03-22 A | 2022-03-22 A | 86 | 100% |  |  | 2022-03-30 | 2022-03-30 | 1d |  | 麦海军 |  |  | ms1008_timer_001_all |
| 89 | 1.2.2.8.2 | 最大计数翻转测试 |  | 1d | 2022-03-25 A | 2022-03-25 A | 88 | 100% |  |  | 2022-03-31 | 2022-03-31 | 1d |  | 麦海军 | 8h | 8h | ms1008_timer_002_max |
| 90 | 1.2.2.8.3 | Timer模块压力测试 |  | 1d | 2022-03-24 A | 2022-03-24 A | 89 | 100% |  |  | 2022-04-01 | 2022-04-01 | 1d |  | 麦海军 | 8h | 8h | ms1008_timer_003_stress |
| 91 | 1.2.2.9 | **Trng** |  | 1d | 2022-03-22 A | 2022-03-22 A |  | 100% |  |  | 2022-04-04 | 2022-04-04 | 1d |  |  |  |  |  |
| 92 | 1.2.2.9.1 | Trng压力测试，输出Excel统计数据 | milestone | 0d | 2022-03-22 A | 2022-03-22 A | 90 | 100% |  |  | 2022-04-04 | 2022-04-04 | 1d |  | 麦海军 |  |  | ms1008_trng_001_stress |
| 93 | 1.2.2.10 | **RF** |  | 1d | 2022-03-25 A | 2022-03-25 A |  | 100% |  |  | 2022-03-31 | 2022-04-07 | 5d |  |  |  |  |  |
| 94 | 1.2.2.10.1 | RF压力测试 | milestone | 0d | 2022-03-25 A | 2022-03-25 A | 66 | 100% |  |  | 2022-03-31 | 2022-04-07 | 5d |  | 韦成 |  |  | ms_1008_rf_001_all |
| 95 | 1.2.2.11 | **BLE** |  | 7d | 2022-03-28 | 2022-04-06 |  | 100% | 2022-04-11 | 2022-04-15 | 2022-03-28 | 2022-04-06 | 7d |  |  | 40h | 40h |  |
| 96 | 1.2.2.11.1 | BLE压力测试 |  | 5d | 2022-04-11 A | 2022-04-15 A |  | 100% |  |  | 2022-03-28 | 2022-04-06 | 7d | start no earlier than 2022-03-28 | 刘晋 | 40h | 40h | ms1008_ble_001_stress |

Notes:
- 74: 手动按不同键，log查看键值，连续测试一小时以上
- 75: 手动按不同组合键，log查看键值，连续测试一小时以上
- 76: 手动长按键键，log查看键值，连续测试一小时以上
- 78: 1.设置为输入模式，外部触发中断，连续测试1个小时
- 79: 1.设置为输出模式，产生方波,连续测试1个小时
- 81: RTC 配置3组固定计数值后，查看中断，连续测试一小时以上
- 82: prescaler计数范围：0~32768/ counter计数范围: 0~0xFFFFFFF
- 84: 配置不同的DIV分频值，通过Jflash读写测试1小时以上
- 86: 启动ir 模块 ，不停发数，使用逻辑分析仪，分析发送数据是否正确，连续测试1小时以上
- 88: 8个timr 分别设定1-8秒的定时时间，同时开启，定时时间到后产生中断，并输出log到pc ,分析log，timer是否正常工作
- 89: 设置timer的时钟源分频系数最小，并设定timer的最小定时时间，定时时间到驱动一个gpio翻转，逻辑分析仪测量波形。
- 90: 8个timr 分别设定1-8秒的定时时间，同时开启，定时时间到后产生中断，并输出log到pc ,分析log，timer是否正常工作。连续测试1小时以上。
- 92: 启动trng模块，并生随机数，并通过串口打印到pc,连续测试1小时以上，分析log中的随机数是否正确
- 94: 配置串口1，测试HCI1小时以上
- 96: BLE 广播配对连接压力测试

| ID | WBS | Task | Type | Duration | Start | Finish | Predecessors | Complete | Remaining | Actual start | Actual finish | Baseline start | Baseline finish | Baseline duration | Total slack | Resources | Work | Actual work | Text3 |
| --- | --- | --- | --- | --- | --- | --- | --- | --- | --- | --- | --- | --- | --- | --- | --- | --- | --- | --- | --- |
| 97 | 1.2.2.12 | **多外设** |  | 3d? | 2022-03-11 | 2022-03-15 |  | 100% |  | 2022-03-25 | 2022-04-19 | 2022-03-11 | 2022-03-15 | 3d? |  |  | 48h | 48h |  |
| 98 | 1.2.2.12.1 | I2S+i2C+SPI0+UART | milestone | 0d | 2022-03-25 A | 2022-03-25 A | 99 | 100% |  |  |  | 2022-04-07 | 2022-04-11 | 3d |  | 麦海军 |  |  | ms1008_mult_001_all |
| 99 | 1.2.2.12.2 | Ceva集成支持Aux |  | 1d | 2022-04-04 A | 2022-04-05 A | 92 | 100% |  |  |  | 2022-04-06 | 2022-04-06 | 1d |  | 麦海军 | 8h | 8h |  |
| 100 | 1.2.2.12.3 | BLE+Audio +Aux+IR+keypad |  | 2d | 2022-04-15 A | 2022-04-19 A | 96 | 100% |  |  |  | 2022-04-07 | 2022-04-12 | 4d |  | 刘晋 | 16h | 16h | ms1008_mult_002_all |
| 101 | 1.2.2.12.4 | BLE+Audio +IR+keypad+其它 |  | 3d | 2022-03-28 A | 2022-03-30 A | 84 | 100% |  |  |  | 2022-04-06 | 2022-04-08 | 3d |  | 江澈 | 24h | 24h | ms1008_mult_003_all |
| 102 | 1.2.3 | **第二阶段补充完成验证点** |  | 22d? | 2022-03-24 A | 2022-04-25 |  | 87% | 2.91d? |  |  | 2022-03-21 | 2022-04-01 |  | 0d |  | 672h | 584h |  |
| 103 | 1.2.3.1 | **TO1 Keyscan软件实现多键功能验证** |  | 9d | 2022-03-24 A | 2022-04-06 |  | 60% | 3.6d |  |  | 2022-03-21 | 2022-04-01 |  | 0d |  | 120h | 72h |  |
| 104 | 1.2.3.1.1 | 代码编写 | manual | 9d | 2022-03-24 A | 2022-04-06 A |  | 100% |  |  |  | 2022-03-21 | 2022-03-24 | 0d |  | 孙茂杰 | 72h | 72h |  |
| 105 | 1.2.3.1.2 | 功能调试验证 | manual | 6d | 2022-03-24 | 2022-03-31 |  |  |  |  |  | 2022-03-25 | 2022-04-01 | 0d |  | 孙茂杰 | 48h |  |  |
| 106 | 1.2.3.2 | **TO1 IR软件实现任意码（TCL提供的协议）** |  | 10d? | 2022-04-12 A | 2022-04-25 |  | 91% | 0.91d? |  |  |  |  |  | 0d |  | 88h | 80h |  |
| 107 | 1.2.3.2.1 | 资料阅读 | manual | 4d | 2022-04-12 A | 2022-04-15 A |  | 100% |  |  |  |  |  |  |  | 应用1 | 32h | 32h |  |
| 108 | 1.2.3.2.2 | 任意码代码开发 | manual | 3d | 2022-04-18 A | 2022-04-20 A |  | 100% |  |  |  |  |  |  |  | 应用1 | 24h | 24h |  |
| 109 | 1.2.3.2.3 | 任意码调试验证 | manual | 3d | 2022-04-21 A | 2022-04-25 A |  | 100% |  |  |  |  |  |  |  | 应用1 | 24h | 24h |  |
| 110 | 1.2.3.2.4 | 功能和压力测试 | manual | 1d? | 2022-04-12 | 2022-04-12 |  |  |  |  |  |  |  |  |  | 应用1 | 8h |  |  |
| 111 | 1.2.3.3 | **TO2 IR 功能开发验证** |  | 16d | 2022-03-28 A | 2022-04-19 A |  | 100% |  |  |  |  |  |  |  |  | 168h | 168h |  |
| 112 | 1.2.3.3.1 | 阅读新的Spec文档 | manual | 1d | 2022-03-28 A | 2022-03-28 A |  | 100% |  |  |  | 2022-03-28 | 2022-03-28 |  |  | 麦海军 | 8h | 8h |  |
| 113 | 1.2.3.3.2 | IR RCA\NEC协议开发 | manual | 2d | 2022-03-29 A | 2022-03-30 A |  | 100% |  |  |  | 2022-03-29 | 2022-03-30 |  |  | 麦海军 | 16h | 16h |  |
| 114 | 1.2.3.3.3 | 任意码代码开发 | manual | 2d | 2022-03-30 A | 2022-03-31 A |  | 100% |  |  |  | 2022-03-30 | 2022-03-31 |  |  | 麦海军 | 16h | 16h |  |
| 115 | 1.2.3.3.4 | IR RCA\NEC协议功能调试验证 | manual | 3d | 2022-04-01 A | 2022-04-06 A |  | 100% |  |  |  | 2022-04-01 | 2022-04-07 |  |  | 麦海军; 孙茂杰 | 48h | 48h |  |
| 116 | 1.2.3.3.5 | 任意码调试验证 | manual | 1d | 2022-04-07 A | 2022-04-07 A |  | 100% |  |  |  | 2022-04-08 | 2022-04-11 |  |  | 麦海军; 孙茂杰 | 16h | 16h |  |
| 117 | 1.2.3.3.6 | 任意码功能和压力测试 | manual | 2d | 2022-04-08 A | 2022-04-11 A |  | 100% |  |  |  | 2022-04-12 | 2022-04-14 |  |  | 麦海军; 孙茂杰 | 32h | 32h |  |
| 118 | 1.2.3.3.7 | IR RCA\NEC协议协议功能和压力测试 | manual | 2d | 2022-04-18 A | 2022-04-19 A |  | 100% |  |  |  | 2022-04-15 | 2022-04-19 |  |  | 麦海军; 孙茂杰 | 32h | 32h |  |
| 119 | 1.2.3.4 | **TO2 Keyscan功能开发验证（单键\双键\三键\长键）** |  | 9d | 2022-03-28 A | 2022-04-08 A |  | 100% |  |  |  |  |  |  |  |  | 128h | 128h |  |
| 120 | 1.2.3.4.1 | 阅读新的Spec文档 | manual | 1d | 2022-03-28 A | 2022-03-28 A |  | 100% |  |  |  | 2022-03-28 | 2022-03-28 |  |  | 韦成 | 8h | 8h |  |
| 121 | 1.2.3.4.2 | Keyscan驱动代码的编写 | manual | 4d | 2022-03-29 A | 2022-04-01 A |  | 100% |  |  |  | 2022-03-29 | 2022-04-01 |  |  | 韦成 | 32h | 32h |  |
| 122 | 1.2.3.4.3 | Keyscan驱动调试 | manual | 3d | 2022-04-02 A | 2022-04-06 A |  | 100% |  |  |  | 2022-04-02 | 2022-04-07 |  |  | 韦成; 孙茂杰 | 56h | 56h |  |
| 123 | 1.2.3.4.4 | Keyscan驱动功能测试 | manual | 1d | 2022-04-07 A | 2022-04-07 A |  | 100% |  |  |  | 2022-04-08 | 2022-04-08 |  |  | 韦成; 孙茂杰 | 16h | 16h |  |
| 124 | 1.2.3.4.5 | Keyscan压力测试 | manual | 1d | 2022-04-08 A | 2022-04-08 A |  | 100% |  |  |  | 2022-04-11 | 2022-04-11 |  |  | 韦成; 孙茂杰 | 16h | 16h |  |

Notes:
- 98: i2s,i2c,spi0,uart, 先单个外设测试，数据量最大，1小时以上， / SPI、AUX、AUDIO、QSPI、I2C、UART、I2S等不同组合加DMA进行集成测试
- 100: 1.蓝牙，aud_adc, aux_adc，ir，keypad大数据压力测试，长期测试 / 2.已经有用例，ir，key，ble，aud 数据比对，测短期5分钟/ 3.测试一个小时, 海军合并aux,刘晋实现电量上报, 茂杰测试
- 101: 1.蓝牙，aud，ir，keypad正常功能下，其他多个外设uart，，spi，qspi，pwm，dmac，aux 同时启动，测试bus_matrix的功能 / 2外设配置uart，I2S0 / 3.外设配置uart，I2C0+pwm0 / 4.外设配置spi0，uart0

| ID | WBS | Task | Type | Duration | Start | Finish | Complete | Remaining | Baseline start | Baseline finish | Baseline duration | Total slack | Resources | Work | Actual work |
| --- | --- | --- | --- | --- | --- | --- | --- | --- | --- | --- | --- | --- | --- | --- | --- |
| 125 | 1.2.3.5 | **TO2 eFuse功能验证** |  | 11d | 2022-04-06 A | 2022-04-20 A | 100% |  |  |  |  |  |  | 64h | 64h |
| 126 | 1.2.3.5.1 | 需求讨论 | manual | 1d | 2022-04-06 A | 2022-04-06 A | 100% |  | 2022-03-28 | 2022-03-28 |  |  | 江澈 | 8h | 8h |
| 127 | 1.2.3.5.2 | SDK代码开发 | manual | 4d | 2022-04-12 A | 2022-04-15 A | 100% |  | 2022-04-12 | 2022-04-12 |  |  | 江澈 | 32h | 32h |
| 128 | 1.2.3.5.3 | 测试验证 | manual | 2d | 2022-04-18 A | 2022-04-19 A | 100% |  | 2022-04-13 | 2022-04-13 | 0d |  | 江澈 | 16h | 16h |
| 129 | 1.2.3.5.4 | 功能和压力测试 | manual | 1d | 2022-04-20 A | 2022-04-20 A | 100% |  | 2022-04-14 | 2022-04-15 | 0d |  | 江澈 | 8h | 8h |
| 130 | 1.2.3.6 | **TO1/2固件加密功能** |  | 12d? | 2022-04-01 A | 2022-04-19 | 83% | 2d? |  |  |  | 0d |  | 48h | 40h |
| 131 | 1.2.3.6.1 | 需求收集和分析 | manual | 1d | 2022-04-01 A | 2022-04-01 A | 100% |  | 2022-03-28 | 2022-04-01 |  |  | 孙茂杰 | 8h | 8h |
| 132 | 1.2.3.6.2 | QSPI 加解密功能验证 | manual | 1d | 2022-04-06 A | 2022-04-06 A | 100% |  | 2022-04-06 | 2022-04-06 | 0d |  | 江澈 | 8h | 8h |
| 133 | 1.2.3.6.3 | Bootloader的代码修改（支持efuse读） | manual | 1d | 2022-04-07 A | 2022-04-07 A | 100% |  | 2022-04-06 | 2022-04-07 |  |  | 江澈 | 8h | 8h |
| 134 | 1.2.3.6.4 | 测试验证 | manual | 2d | 2022-04-18 A | 2022-04-19 A | 100% |  | 2022-04-08 | 2022-04-08 |  |  | 江澈 | 16h | 16h |
| 135 | 1.2.3.6.5 | Jlink解锁功能验证 | manual | 1d? | 2022-04-01 | 2022-04-01 |  |  | 2022-04-11 | 2022-04-11 |  |  | 江澈 | 8h |  |
| 136 | 1.2.3.7 | **TO2 Audio RTL 修改验证** |  | 4d | 2022-04-18 A | 2022-04-21 A | 100% |  |  |  |  |  |  | 32h | 32h |
| 137 | 1.2.3.7.1 | Audio 代码优化 | manual | 2d | 2022-04-18 A | 2022-04-19 A | 100% |  | 2022-04-08 | 2022-04-08 |  |  | 韦成 | 16h | 16h |
| 138 | 1.2.3.7.2 | 功能测试验证 | manual | 2d | 2022-04-20 A | 2022-04-21 A | 100% |  | 2022-04-11 | 2022-04-11 |  |  | 韦成 | 16h | 16h |
| 139 | 1.2.3.8 | **TO2集成测试** |  | 1d | 2022-04-21 A | 2022-04-21 |  | 1d | 2022-04-12 | 2022-04-14 |  | 0d |  | 24h |  |
| 140 | 1.2.3.8.1 | 集成新的Keyscan、IR等测试（含BLE、Audio、Key、IR、DS） | manual | 1d | 2022-04-21 A | 2022-04-21 |  | 1d | 2022-04-12 | 2022-04-19 |  |  | 刘晋; 韦成; 麦海军 | 24h |  |
